# 项目进度表1

Schedule from MS Project, 2020-06-05 to 2020-09-07, status date 2017-09-23, A marks actual dates.
南瑞继保

## Calendars

- 标准: Mon-Fri 08:00-12:00, 13:00-17:00; Sat-Sun off. Exceptions (off unless hours are given): 2020-06-28 08:00-12:00, 13:00-17:00, 2020-07-11 08:00-12:00, 13:00-17:00, 2020-07-18 08:00-12:00, 13:00-17:00, 2020-07-25 08:00-12:00, 13:00-17:00, 2020-08-01 08:00-12:00, 13:00-17:00, 2020-08-08 08:00-12:00, 13:00-17:00, 2020-08-15 08:00-12:00, 13:00-17:00, 2020-08-22 08:00-12:00, 13:00-17:00, 2020-08-29 08:00-12:00, 13:00-17:00, 2020-09-05 08:00-12:00, 13:00-17:00.
- 科创日历: Mon-Fri 08:00-12:00, 13:00-17:00; Sat-Sun off.

## Resources

| Resource | Group | Rate |
| --- | --- | --- |
| PM | 管理 | 1 |
| SM |  | 1 |
| QA | 质保 | 1 |
| CM | 配置 | 1 |
| CCB |  | 1 |
| 李刚 |  |  |
| 张宝杰 |  |  |
| 高翔 |  |  |
| 李明强 |  |  |
| 庄新胜 |  |  |
| 邱辉 |  |  |
| 韩帅 |  |  |
| 徐长乐 |  |  |
| 秦丕文 |  |  |

## Schedule

| ID | WBS | Task | Duration | Start | Finish | Predecessors | Remaining | Baseline start | Baseline finish | Baseline duration | Total slack | Free slack | Constraint | Resources | Work | Actual work | Baseline cost | Text1 |
| --- | --- | --- | --- | --- | --- | --- | --- | --- | --- | --- | --- | --- | --- | --- | --- | --- | --- | --- |
| 1 | 1 | **智能自助办证借还管理系统** | 77d | 2020-06-05 08:00 A | 2020-09-07 18:00 |  | 76.76d |  |  |  | 0d |  |  |  | 1341.77h | 8.96h |  |  |
| 2 | 1.1 | **项目管理** | 77d | 2020-06-05 08:00 | 2020-09-07 18:00 |  |  |  |  |  | 0d |  |  |  | 250h |  |  |  |
| 3 | 1.1.1 | **项目启动** | 1.12d | 2020-06-05 08:00 | 2020-06-05 18:00 |  |  |  |  |  |  |  |  |  | 18h |  |  |  |
| 4 | 1.1.1.1 | 项目启动会议 | 0.25d | 2020-06-05 15:00 | 2020-06-05 18:00 |  |  | 2006-06-14 08:00 | 2006-06-14 17:00 | 1d? | 76d |  | finish no earlier than 2020-06-05 18:00 | 李刚; 张宝杰; 高翔; 李明强; 庄新胜; 邱辉; 韩帅; 徐长乐; 秦丕文 | 18h |  | 8 | 《项目启动会议纪要》 |
| 5 | 1.1.2 | **项目计划** | 22.12d | 2020-06-05 08:00 | 2020-07-03 18:00 | 3 |  |  |  |  |  |  |  |  | 58h |  |  |  |
| 6 | 1.1.2.1 | **初步计划** | 5.12d | 2020-06-05 08:00 | 2020-06-11 18:00 |  |  |  |  |  |  |  |  |  | 23h |  |  |  |
| 7 | 1.1.2.1.1 | 初步裁剪 | 0.5d | 2020-06-05 13:00 | 2020-06-05 18:00 |  |  | 2006-06-14 08:00 | 2006-06-14 17:00 | 1d? | 74d | 0.5d | finish no earlier than 2020-06-05 18:00 | 高翔 | 4h |  |  | 《项目已定义过程》 |
| 8 | 1.1.2.1.2 | 初步估算（规模和工作量） | 0.5d | 2020-06-08 13:00 | 2020-06-08 18:00 | 7 |  |  |  |  | 73.5d | 0.75d | finish no earlier than 2020-06-08 18:00 | 高翔 | 4h |  |  | 《项目估算表》 |
| 9 | 1.1.2.1.3 | **制定项目初步计划及下属子计划** | 3.12d | 2020-06-09 08:00 | 2020-06-11 18:00 |  |  | 2006-06-14 08:00 | 2006-06-14 17:00 | 1d? |  |  |  |  | 14h |  |  |  |
| 10 | 1.1.2.1.3.1 | 制定初步的《项目计划》 | 1.25d | 2020-06-09 15:00 | 2020-06-10 18:00 | 8 |  |  |  |  | 72.75d | 0.75d | finish no earlier than 2020-06-10 18:00 | 高翔 [50%] | 5h |  |  | 《项目计划》初稿 |
| 11 | 1.1.2.1.3.2 | 制定初步的《质量保证计划》 | 0.75d | 2020-06-10 10:00 | 2020-06-10 18:00 |  |  | 2006-06-14 08:00 | 2006-06-14 17:00 | 1d? | 72.75d | 0.75d | finish no earlier than 2020-06-10 18:00 | 李明强 [50%] | 3h |  |  | 《质量保证计划》初稿 |
| 12 | 1.1.2.1.3.3 | 制定初步的《配置管理计划》 | 0.75d | 2020-06-10 10:00 | 2020-06-10 18:00 |  |  | 2006-06-14 08:00 | 2006-06-14 17:00 | 1d? | 72.75d | 0.75d | finish no earlier than 2020-06-10 18:00 | 张宝杰 [50%] | 3h |  |  | 《配置管理计划》初稿 |
| 13 | 1.1.2.1.3.4 | 制定初步的《项目进度表》 | 0.75d | 2020-06-10 10:00 | 2020-06-10 18:00 |  |  |  |  |  | 73d |  | finish no earlier than 2020-06-10 18:00 | 高翔 [50%] | 3h |  |  | 《项目进度表》初稿 |
| 14 | 1.1.2.1.4 | 初步项目计划及下属子计划审批 | 0.25d | 2020-06-11 15:00 | 2020-06-11 18:00 | 10, 11, 12 |  | 2006-06-14 08:00 | 2006-06-14 08:00 | 0d | 72d |  | finish no earlier than 2020-06-11 18:00 | 高翔 [50%] | 1h |  |  | 高级经理审批签字后的项目计划及下属子计划 |
| 15 | 1.1.2.2 | **详细计划** | 2.12d | 2020-07-02 08:00 | 2020-07-03 18:00 | 126 |  | 2006-06-14 08:00 | 2006-06-14 17:00 | 1d? |  |  |  |  | 35h |  |  |  |
| 16 | 1.1.2.2.1 | 详细裁剪 | 0.12d | 2020-07-02 16:00 | 2020-07-02 18:00 |  |  |  |  |  | 56d |  | finish no earlier than 2020-07-02 18:00 | 高翔 | 1h |  |  |  |
| 17 | 1.1.2.2.2 | 详细估算（规模和工作量） | 0.5d | 2020-07-02 13:00 | 2020-07-02 18:00 |  |  | 2006-06-14 08:00 | 2006-06-14 17:00 | 1d? | 56d |  | finish no earlier than 2020-07-02 18:00 | 高翔 | 4h |  |  | 《项目功能点复杂度估算》、《项目计划》中的“项目估算”内容、《项目估算表单(PERT)》 |
| 18 | 1.1.2.2.3 | **制定详细的《项目计划》及下属子计划** | 1.12d | 2020-07-02 08:00 | 2020-07-02 18:00 |  |  | 2006-06-14 08:00 | 2006-06-14 17:00 | 1d? |  |  |  |  | 7h |  |  |  |
| 19 | 1.1.2.2.3.1 | 更新《项目计划》 | 0.12d | 2020-07-02 16:00 | 2020-07-02 18:00 |  |  |  |  |  | 56d |  | finish no earlier than 2020-07-02 18:00 | 高翔 | 1h |  |  | 《项目计划》终稿 |
| 20 | 1.1.2.2.3.2 | 更新《配置管理计划》 | 0.12d | 2020-07-02 16:00 | 2020-07-02 18:00 |  |  | 2006-06-14 08:00 | 2006-06-14 17:00 | 1d? | 56d |  | finish no earlier than 2020-07-02 18:00 | 张宝杰 | 1h |  |  | 《配置管理计划》终稿 |
| 21 | 1.1.2.2.3.3 | 更新《质量保证计划》 | 0.12d | 2020-07-02 16:00 | 2020-07-02 18:00 |  |  | 2006-06-14 08:00 | 2006-06-14 17:00 | 1d? | 56d |  | finish no earlier than 2020-07-02 18:00 | 李明强 | 1h |  |  | 《质量保证计划》终稿 |
| 22 | 1.1.2.2.3.4 | 更新《项目进度表》 | 0.5d | 2020-07-02 08:00 | 2020-07-02 12:00 |  |  | 2006-06-14 08:00 | 2006-06-14 17:00 | 1d? | 56.5d |  | start no earlier than 2020-07-02 08:00 | 高翔 | 4h |  |  | 《项目进度表》终稿 |
| 23 | 1.1.2.2.4 | **《项目计划》及下属子计划评审(管理评审)** | 1.12d | 2020-07-03 08:00 | 2020-07-03 18:00 |  |  |  |  |  |  |  |  |  | 23h |  |  |  |
| 24 | 1.1.2.2.4.1 | 准备评审 | 0.25d | 2020-07-03 15:00 | 2020-07-03 18:00 |  |  | 2006-06-14 08:00 | 2006-06-14 17:00 | 1d? | 55d |  | finish no earlier than 2020-07-03 18:00 | 李明强 | 2h |  | 8 | 《项目计划评审准备表》 |
| 25 | 1.1.2.2.4.2 | 举行评审会议 | 0.25d | 2020-07-03 15:00 | 2020-07-03 18:00 |  |  | 2006-06-14 08:00 | 2006-06-14 17:00 | 1d? | 55d |  | finish no earlier than 2020-07-03 18:00 | 李刚; 张宝杰; 高翔; 李明强; 庄新胜; 邱辉; 徐长乐; 秦丕文 | 16h |  | 8 | 《项目计划评审报告》《项目计划评审会议纪要》 |

| ID | WBS | Task | Duration | Start | Finish | Baseline start | Baseline finish | Baseline duration | Total slack | Constraint | Resources | Work | Text1 |
| --- | --- | --- | --- | --- | --- | --- | --- | --- | --- | --- | --- | --- | --- |
| 26 | 1.1.2.2.4.3 | **修正、跟踪与审核** | 1.12d | 2020-07-03 08:00 | 2020-07-03 18:00 | 2006-06-14 08:00 | 2006-06-14 17:00 | 1d? |  |  |  | 5h |  |
| 27 | 1.1.2.2.4.3.1 | 修正工作产品 | 0.5d | 2020-07-03 13:00 | 2020-07-03 18:00 |  |  |  | 55d | finish no earlier than 2020-07-03 18:00 | 高翔 | 4h | 修正后的工作产品：《项目计划》及下属子计划 |
| 28 | 1.1.2.2.4.3.2 | 修改后的工作产品的确认 | 0.12d | 2020-07-03 16:00 | 2020-07-03 18:00 |  |  |  | 55d | finish no earlier than 2020-07-03 18:00 | 李明强 | 1h | 《项目变更记录》 |
| 29 | 1.1.3 | **执行与控制** | 77.12d | 2020-06-05 08:00 | 2020-09-07 18:00 |  |  |  |  |  |  | 138h |  |
| 30 | 1.1.3.1 | **项目周报** | 71.12d | 2020-06-15 08:00 | 2020-09-07 18:00 |  |  |  |  |  |  | 6h |  |
| 31 | 1.1.3.1.1 | 项目周报 1 | 0.06d | 2020-06-15 08:00 | 2020-06-15 08:30 |  |  |  | 70.94d | start no earlier than 2020-06-15 08:00 | 高翔 | 0.5h |  |
| 32 | 1.1.3.1.2 | 项目周报 2 | 0.06d | 2020-06-22 08:00 | 2020-06-22 08:30 |  |  |  | 65.94d | start no earlier than 2020-06-22 08:00 | 高翔 | 0.5h |  |
| 33 | 1.1.3.1.3 | 项目周报 3 | 0.06d | 2020-06-29 08:00 | 2020-06-29 08:30 |  |  |  | 59.94d | start no earlier than 2020-06-29 08:00 | 高翔 | 0.5h |  |
| 34 | 1.1.3.1.4 | 项目周报 4 | 0.06d | 2020-07-06 08:00 | 2020-07-06 08:30 |  |  |  | 54.94d | start no earlier than 2020-07-06 08:00 | 高翔 | 0.5h |  |
| 35 | 1.1.3.1.5 | 项目周报 5 | 0.06d | 2020-07-13 08:00 | 2020-07-13 08:30 |  |  |  | 48.94d | start no earlier than 2020-07-13 08:00 | 高翔 | 0.5h |  |
| 36 | 1.1.3.1.6 | 项目周报 6 | 0.06d | 2020-07-20 08:00 | 2020-07-20 08:30 |  |  |  | 42.94d | start no earlier than 2020-07-20 08:00 | 高翔 | 0.5h |  |
| 37 | 1.1.3.1.7 | 项目周报 7 | 0.06d | 2020-07-27 08:00 | 2020-07-27 08:30 |  |  |  | 36.94d | start no earlier than 2020-07-27 08:00 | 高翔 | 0.5h |  |
| 38 | 1.1.3.1.8 | 项目周报 8 | 0.06d | 2020-08-03 08:00 | 2020-08-03 08:30 |  |  |  | 30.94d | start no earlier than 2020-08-03 08:00 | 高翔 | 0.5h |  |
| 39 | 1.1.3.1.9 | 项目周报 9 | 0.06d | 2020-08-10 08:00 | 2020-08-10 08:30 |  |  |  | 24.94d | start no earlier than 2020-08-10 08:00 | 高翔 | 0.5h |  |
| 40 | 1.1.3.1.10 | 项目周报 10 | 0.06d | 2020-08-17 08:00 | 2020-08-17 08:30 |  |  |  | 18.94d | start no earlier than 2020-08-17 08:00 | 高翔 | 0.5h |  |
| 41 | 1.1.3.1.11 | 项目周报 11 | 0.06d | 2020-08-24 08:00 | 2020-08-24 08:30 |  |  |  | 12.94d | start no earlier than 2020-08-24 08:00 | 高翔 | 0.5h |  |
| 42 | 1.1.3.1.12 | 项目周报 12 | 0.06d | 2020-08-31 08:00 | 2020-08-31 08:30 |  |  |  | 6.94d | start no earlier than 2020-08-31 08:00 | 高翔 | 0.5h |  |
| 43 | 1.1.3.2 | **项目周例会** | 71.12d | 2020-06-15 08:00 | 2020-09-07 18:00 |  |  |  |  |  |  | 96h |  |
| 44 | 1.1.3.2.1 | 项目周例会 1 | 0.12d | 2020-06-15 08:00 | 2020-06-15 09:00 |  |  |  | 70.88d | start no earlier than 2020-06-15 08:00 | 李刚; 张宝杰; 高翔; 李明强; 庄新胜; 邱辉; 徐长乐; 秦丕文 | 8h |  |
| 45 | 1.1.3.2.2 | 项目周例会 2 | 0.12d | 2020-06-22 08:00 | 2020-06-22 09:00 |  |  |  | 65.88d | start no earlier than 2020-06-22 08:00 | 李刚; 张宝杰; 高翔; 李明强; 庄新胜; 邱辉; 徐长乐; 秦丕文 | 8h |  |
| 46 | 1.1.3.2.3 | 项目周例会 3 | 0.12d | 2020-06-29 08:00 | 2020-06-29 09:00 |  |  |  | 59.88d | start no earlier than 2020-06-29 08:00 | 李刚; 张宝杰; 高翔; 李明强; 庄新胜; 邱辉; 徐长乐; 秦丕文 | 8h |  |
| 47 | 1.1.3.2.4 | 项目周例会 4 | 0.12d | 2020-07-06 08:00 | 2020-07-06 09:00 |  |  |  | 54.88d | start no earlier than 2020-07-06 08:00 | 李刚; 张宝杰; 高翔; 李明强; 庄新胜; 邱辉; 徐长乐; 秦丕文 | 8h |  |
| 48 | 1.1.3.2.5 | 项目周例会 5 | 0.12d | 2020-07-13 08:00 | 2020-07-13 09:00 |  |  |  | 48.88d | start no earlier than 2020-07-13 08:00 | 李刚; 张宝杰; 高翔; 李明强; 庄新胜; 邱辉; 徐长乐; 秦丕文 | 8h |  |
| 49 | 1.1.3.2.6 | 项目周例会 6 | 0.12d | 2020-07-20 08:00 | 2020-07-20 09:00 |  |  |  | 42.88d | start no earlier than 2020-07-20 08:00 | 李刚; 张宝杰; 高翔; 李明强; 庄新胜; 邱辉; 徐长乐; 秦丕文 | 8h |  |
| 50 | 1.1.3.2.7 | 项目周例会 7 | 0.12d | 2020-07-27 08:00 | 2020-07-27 09:00 |  |  |  | 36.88d | start no earlier than 2020-07-27 08:00 | 李刚; 张宝杰; 高翔; 李明强; 庄新胜; 邱辉; 徐长乐; 秦丕文 | 8h |  |
| 51 | 1.1.3.2.8 | 项目周例会 8 | 0.12d | 2020-08-03 08:00 | 2020-08-03 09:00 |  |  |  | 30.88d | start no earlier than 2020-08-03 08:00 | 李刚; 张宝杰; 高翔; 李明强; 庄新胜; 邱辉; 徐长乐; 秦丕文 | 8h |  |
| 52 | 1.1.3.2.9 | 项目周例会 9 | 0.12d | 2020-08-10 08:00 | 2020-08-10 09:00 |  |  |  | 24.88d | start no earlier than 2020-08-10 08:00 | 李刚; 张宝杰; 高翔; 李明强; 庄新胜; 邱辉; 徐长乐; 秦丕文 | 8h |  |
| 53 | 1.1.3.2.10 | 项目周例会 10 | 0.12d | 2020-08-17 08:00 | 2020-08-17 09:00 |  |  |  | 18.88d | start no earlier than 2020-08-17 08:00 | 李刚; 张宝杰; 高翔; 李明强; 庄新胜; 邱辉; 徐长乐; 秦丕文 | 8h |  |
| 54 | 1.1.3.2.11 | 项目周例会 11 | 0.12d | 2020-08-24 08:00 | 2020-08-24 09:00 |  |  |  | 12.88d | start no earlier than 2020-08-24 08:00 | 李刚; 张宝杰; 高翔; 李明强; 庄新胜; 邱辉; 徐长乐; 秦丕文 | 8h |  |
| 55 | 1.1.3.2.12 | 项目周例会 12 | 0.12d | 2020-08-31 08:00 | 2020-08-31 09:00 |  |  |  | 6.88d | start no earlier than 2020-08-31 08:00 | 李刚; 张宝杰; 高翔; 李明强; 庄新胜; 邱辉; 徐长乐; 秦丕文 | 8h |  |

| ID | WBS | Task | Type | Duration | Start | Finish | Predecessors | Baseline start | Baseline finish | Baseline duration | Total slack | Free slack | Constraint | Calendar | Resources | Work | Text1 |
| --- | --- | --- | --- | --- | --- | --- | --- | --- | --- | --- | --- | --- | --- | --- | --- | --- | --- |
| 56 | 1.1.3.3 | **里程碑评审(管理评审)** |  | 42.12d | 2020-07-21 08:00 | 2020-09-07 18:00 |  | 2006-06-14 08:00 | 2006-06-14 17:00 | 1d? |  |  |  |  |  | 27h |  |
| 57 | 1.1.3.3.1 | **计划、需求与设计里程碑评审** |  | 0.64d | 2020-07-21 08:00 | 2020-07-21 14:07 |  |  |  |  |  |  |  |  |  | 9h |  |
| 58 | 1.1.3.3.1.1 | 评审准备 |  | 0.12d | 2020-07-21 08:00 | 2020-07-21 09:00 |  | 2006-06-14 08:00 | 2006-06-14 17:00 | 1d? | 41.88d |  | start no earlier than 2020-07-21 08:00 |  | 李明强 | 0.5h |  |
| 59 | 1.1.3.3.1.2 | 执行评审 |  | 0.12d | 2020-07-21 08:00 | 2020-07-21 09:00 |  | 2006-06-14 08:00 | 2006-06-14 17:00 | 1d? | 41.88d |  | start no earlier than 2020-07-21 08:00 |  | 李刚; 张宝杰; 高翔; 李明强; 庄新胜; 邱辉; 徐长乐; 秦丕文 | 8h |  |
| 60 | 1.1.3.3.1.3 | 后续工作 |  | 0.12d | 2020-07-21 08:00 | 2020-07-21 09:00 |  | 2006-06-14 08:00 | 2006-06-14 17:00 | 1d? | 41.88d |  | start no earlier than 2020-07-21 08:00 |  | 李明强 | 0.5h |  |
| 61 | 1.1.3.3.2 | **编码与集成里程碑评审** |  | 0.64d | 2020-08-21 08:00 | 2020-08-21 14:07 |  |  |  |  |  |  |  |  |  | 9h |  |
| 62 | 1.1.3.3.2.1 | 评审准备 |  | 0.12d | 2020-08-21 08:00 | 2020-08-21 09:00 |  | 2006-06-14 08:00 | 2006-06-14 17:00 | 1d? | 14.75d | 0d | start no earlier than 2020-08-21 08:00 |  | 李明强 | 0.5h |  |
| 63 | 1.1.3.3.2.2 | 执行评审 |  | 0.12d | 2020-08-21 09:00 | 2020-08-21 10:00 | 62 | 2006-06-14 08:00 | 2006-06-14 17:00 | 1d? | 14.75d |  | start no earlier than 2020-08-21 08:00 |  | 李刚; 张宝杰; 高翔; 李明强; 庄新胜; 邱辉; 徐长乐; 秦丕文 | 8h |  |
| 64 | 1.1.3.3.2.3 | 后续工作 |  | 0.12d | 2020-08-21 08:00 | 2020-08-21 09:00 |  | 2006-06-14 08:00 | 2006-06-14 17:00 | 1d? | 14.88d |  | start no earlier than 2020-08-21 08:00 |  | 李明强 | 0.5h |  |
| 65 | 1.1.3.3.3 | **测试、实施与结项里程碑评审** |  | 0.75d | 2020-09-07 08:00 | 2020-09-07 15:00 |  |  |  |  |  |  |  |  |  | 9h |  |
| 66 | 1.1.3.3.3.1 | 评审准备 |  | 0.12d | 2020-09-07 08:00 | 2020-09-07 09:00 |  | 2006-06-14 08:00 | 2006-06-14 17:00 | 1d? | 0.88d |  | start no earlier than 2020-09-07 08:00 |  | 李明强 | 0.5h |  |
| 67 | 1.1.3.3.3.2 | 执行评审 |  | 0.12d | 2020-09-07 08:00 | 2020-09-07 09:00 |  | 2006-06-14 08:00 | 2006-06-14 17:00 | 1d? | 0.75d | 0d | start no earlier than 2020-09-07 08:00 |  | 李刚; 张宝杰; 高翔; 李明强; 庄新胜; 邱辉; 徐长乐; 秦丕文 | 8h |  |
| 68 | 1.1.3.3.3.3 | 后续工作 |  | 0.12d | 2020-09-07 09:00 | 2020-09-07 10:00 | 67 | 2006-06-14 08:00 | 2006-06-14 17:00 | 1d? | 0.75d |  | start no earlier than 2020-09-07 08:00 |  | 李明强 | 0.5h |  |
| 69 | 1.1.3.4 | **度量信息维护更新** |  | 48.12d | 2020-07-02 08:00 | 2020-09-07 18:00 |  |  |  |  |  |  |  | 科创日历 |  | 3h | 《项目度量数据库》 |
| 70 | 1.1.3.4.1 | 《项目度量库》数据更新 1（需求开发阶段结束） | manual | 0.14d | 2020-07-02 08:00 | 2020-07-02 09:07 |  |  |  |  |  |  | start no earlier than 2020-07-02 08:00 | 科创日历 | 高翔 | 0.5h |  |
| 71 | 1.1.3.4.2 | 《项目度量库》数据更新 2（系统设计阶段结束） | manual | 0.14d | 2020-07-21 08:00 | 2020-07-21 09:07 |  |  |  |  |  |  | start no earlier than 2020-07-21 08:00 | 科创日历 | 高翔 | 0.5h |  |
| 72 | 1.1.3.4.3 | 《项目度量库》数据更新 3（编码实现阶段结束） | manual | 0.14d | 2020-08-19 08:00 | 2020-08-19 09:07 |  |  |  |  |  |  | start no earlier than 2020-08-19 08:00 | 科创日历 | 高翔 | 0.5h |  |
| 73 | 1.1.3.4.4 | 《项目度量库》数据更新 4（产品集成阶段结束） | manual | 0.14d | 2020-08-21 08:00 | 2020-08-21 09:07 |  |  |  |  |  |  | start no earlier than 2020-08-21 08:00 | 科创日历 | 高翔 | 0.5h |  |
| 74 | 1.1.3.4.5 | 《项目度量库》数据更新 5（系统测试阶段结束） | manual | 0.14d | 2020-08-28 08:00 | 2020-08-28 09:07 |  |  |  |  |  |  | start no earlier than 2020-08-28 08:00 | 科创日历 | 高翔 | 0.5h |  |
| 75 | 1.1.3.4.6 | 《项目度量库》数据更新 6（产品交付阶段结束） | manual | 0.14d | 2020-09-07 08:00 | 2020-09-07 09:07 |  |  |  |  |  |  | start no earlier than 2020-09-07 08:00 | 科创日历 | 高翔 | 0.5h |  |
| 76 | 1.1.3.5 | **风险识别与跟踪** |  | 77.12d | 2020-06-05 08:00 | 2020-09-07 18:00 |  |  |  |  |  |  |  |  |  | 6h |  |
| 77 | 1.1.3.5.1 | 风险识别与跟踪 1 |  | 0.06d | 2020-06-15 08:00 | 2020-06-15 08:30 |  |  |  |  | 70.94d |  | start no earlier than 2020-06-15 08:00 |  | 高翔 | 0.5h |  |
| 78 | 1.1.3.5.2 | 风险识别与跟踪 2 |  | 0.06d | 2020-06-22 08:00 | 2020-06-22 08:30 |  |  |  |  | 65.94d |  | start no earlier than 2020-06-22 08:00 |  | 高翔 | 0.5h |  |
| 79 | 1.1.3.5.3 | 风险识别与跟踪 3 |  | 0.06d | 2020-06-29 08:00 | 2020-06-29 08:30 |  |  |  |  | 59.94d |  | start no earlier than 2020-06-29 08:00 |  | 高翔 | 0.5h |  |
| 80 | 1.1.3.5.4 | 风险识别与跟踪 4 |  | 0.06d | 2020-07-06 08:00 | 2020-07-06 08:30 |  |  |  |  | 54.94d |  | start no earlier than 2020-07-06 08:00 |  | 高翔 | 0.5h |  |
| 81 | 1.1.3.5.5 | 风险识别与跟踪 5 |  | 0.06d | 2020-07-13 08:00 | 2020-07-13 08:30 |  |  |  |  | 48.94d |  | start no earlier than 2020-07-13 08:00 |  | 高翔 | 0.5h |  |
| 82 | 1.1.3.5.6 | 风险识别与跟踪 6 |  | 0.06d | 2020-07-20 08:00 | 2020-07-20 08:30 |  |  |  |  | 42.94d |  | start no earlier than 2020-07-20 08:00 |  | 高翔 | 0.5h |  |
| 83 | 1.1.3.5.7 | 风险识别与跟踪 7 |  | 0.06d | 2020-07-27 08:00 | 2020-07-27 08:30 |  |  |  |  | 36.94d |  | start no earlier than 2020-07-27 08:00 |  | 高翔 | 0.5h |  |
| 84 | 1.1.3.5.8 | 风险识别与跟踪 8 |  | 0.06d | 2020-08-03 08:00 | 2020-08-03 08:30 |  |  |  |  | 30.94d |  | start no earlier than 2020-08-03 08:00 |  | 高翔 | 0.5h |  |
| 85 | 1.1.3.5.9 | 风险识别与跟踪 9 |  | 0.06d | 2020-08-10 08:00 | 2020-08-10 08:30 |  |  |  |  | 24.94d |  | start no earlier than 2020-08-10 08:00 |  | 高翔 | 0.5h |  |
| 86 | 1.1.3.5.10 | 风险识别与跟踪 10 |  | 0.06d | 2020-08-17 08:00 | 2020-08-17 08:30 |  |  |  |  | 18.94d |  | start no earlier than 2020-08-17 08:00 |  | 高翔 | 0.5h |  |
| 87 | 1.1.3.5.11 | 风险识别与跟踪 11 |  | 0.06d | 2020-08-24 08:00 | 2020-08-24 08:30 |  |  |  |  | 12.94d |  | start no earlier than 2020-08-24 08:00 |  | 高翔 | 0.5h |  |
| 88 | 1.1.3.5.12 | 风险识别与跟踪 12 |  | 0.06d | 2020-08-31 08:00 | 2020-08-31 08:30 |  |  |  |  | 6.94d |  | start no earlier than 2020-08-31 08:00 |  | 高翔 | 0.5h |  |

| ID | WBS | Task | Type | Duration | Start | Finish | Predecessors | Baseline start | Baseline finish | Baseline duration | Total slack | Free slack | Constraint | Resources | Work | Baseline cost | Text1 |
| --- | --- | --- | --- | --- | --- | --- | --- | --- | --- | --- | --- | --- | --- | --- | --- | --- | --- |
| 89 | 1.1.4 | **项目结项** |  | 2.12d | 2020-09-05 08:00 | 2020-09-07 18:00 |  | 2006-06-14 08:00 | 2006-06-14 17:00 | 1d? |  |  |  |  | 36h |  |  |
| 90 | 1.1.4.1 | **结项准备** |  | 1.12d | 2020-09-05 08:00 | 2020-09-05 18:00 |  |  |  |  |  |  |  |  | 9h |  |  |
| 91 | 1.1.4.1.1 | 撰写《结项报告》 |  | 0.62d | 2020-09-05 08:00 | 2020-09-05 14:00 |  | 2006-06-14 08:00 | 2006-06-14 17:00 | 1d? | 1.38d |  | start no earlier than 2020-09-05 08:00 | 高翔 | 5h |  | 《项目结项总结报告》 |
| 92 | 1.1.4.1.2 | 撰写《QA总结报告》 |  | 0.5d | 2020-09-05 13:00 | 2020-09-05 18:00 |  | 2006-06-14 08:00 | 2006-06-14 17:00 | 1d? | 1d |  | finish no earlier than 2020-09-05 18:00 | 李明强 | 4h |  | 《QA总结报告》 |
| 93 | 1.1.4.2 | 结项申请，高级经理阅读申请材料 |  | 0.25d | 2020-09-05 08:00 | 2020-09-05 10:00 |  | 2006-06-14 08:00 | 2006-06-14 17:00 | 1d? | 1.75d |  | start no earlier than 2020-09-05 08:00 | 李刚 | 2h |  | 《项目结项申请单》 |
| 94 | 1.1.4.3 | **度量分析** |  | 0.31d | 2020-09-05 08:00 | 2020-09-05 10:28 |  |  |  |  |  |  |  |  | 3h |  |  |
| 95 | 1.1.4.3.1 | 项目结项阶段度量数据收集整理 |  | 0.25d | 2020-09-05 08:00 | 2020-09-05 10:00 |  |  |  |  | 1.75d |  | start no earlier than 2020-09-05 08:00 | 高翔 | 2h |  |  |
| 96 | 1.1.4.3.2 | 更新《项目度量数据库》 |  | 0.12d | 2020-09-05 08:00 | 2020-09-05 09:00 |  |  |  |  | 1.88d |  | start no earlier than 2020-09-05 08:00 | 高翔 | 1h |  | 《项目度量数据库》 |
| 97 | 1.1.4.4 | **召开项目结项会议** |  | 1.12d | 2020-09-07 08:00 | 2020-09-07 18:00 |  | 2006-06-14 08:00 | 2006-06-14 17:00 | 1d? |  |  |  |  | 20h |  |  |
| 98 | 1.1.4.4.1 | 项目结项会议 | manual | 0.25d | 2020-09-07 08:00 | 2020-09-07 10:00 |  |  |  |  |  |  |  | 李刚; 张宝杰; 高翔; 李明强; 庄新胜; 邱辉; 徐长乐; 秦丕文 | 16h |  | 《项目结项评审报告》《结项会议纪要》 |
| 99 | 1.1.4.4.2 | 总结经验教训 |  | 0.25d | 2020-09-07 10:00 | 2020-09-07 12:00 | 98 |  |  |  | 0.25d | 0d | start no earlier than 2020-08-03 08:00 | 高翔 | 2h |  | 《项目过程改进建议》 |
| 100 | 1.1.4.4.3 | 高级经理批准结项 | manual | 0.25d | 2020-09-07 08:00 | 2020-09-07 10:00 | 99 |  |  |  |  |  | start no earlier than 2020-09-07 08:00 | 李刚 | 2h |  | 高级经理审批后的《结项报告》 |
| 101 | 1.1.4.5 | **项目资产纳入组织过程资产库** |  | 0.5d | 2020-09-07 08:00 | 2020-09-07 12:00 |  | 2006-06-14 08:00 | 2006-06-14 17:00 | 1d? |  |  |  |  | 2h |  |  |
| 102 | 1.1.4.5.1 | EPG纳入组织资产库 | manual | 0.5d | 2020-09-07 08:00 | 2020-09-07 12:00 |  |  |  |  |  |  | start no earlier than 2020-09-07 08:00 | 李刚 | 2h |  | 组织资产库 |
| 103 | 1.2 | **工程过程** |  | 70.12d | 2020-06-12 08:00 | 2020-09-04 18:00 |  |  |  |  |  |  |  |  | 1005.31h |  |  |
| 104 | 1.2.1 | **需求开发** |  | 16.12d | 2020-06-12 08:00 | 2020-07-02 18:00 |  | 2006-06-14 08:00 | 2006-06-15 17:00 | 2d? |  |  |  |  | 131h | 65 |  |
| 105 | 1.2.1.1 | **用户需求获取** |  | 6d | 2020-06-12 08:00 | 2020-06-19 17:00 |  | 2006-06-14 08:00 | 2006-06-14 17:00 | 1d? | 5d |  |  |  | 46h | 8 |  |
| 106 | 1.2.1.1.1 | 需求调查前准备 |  | 0.75d | 2020-06-12 08:00 | 2020-06-12 15:00 |  |  |  |  | 17.25d |  | start no earlier than 2020-06-12 08:00 | 高翔 | 6h |  | 《需求调研计划》 |
| 107 | 1.2.1.1.2 | 需求调研 |  | 3d | 2020-06-15 08:00 | 2020-06-17 17:00 |  |  |  |  | 14d |  | start no earlier than 2020-06-15 08:00 | 高翔 | 24h |  | 《需求调查单》 |
| 108 | 1.2.1.1.3 | 撰写《用户需求说明书》 |  | 2d | 2020-06-18 08:00 | 2020-06-19 17:00 |  |  |  |  | 1d | 0d | start no earlier than 2020-06-18 08:00 | 高翔 | 16h |  | 《用户需求说明书》 |
| 109 | 1.2.1.2 | **用户需求评审(正式评审)** |  | 2.12d | 2020-06-22 08:00 | 2020-06-23 18:00 | 108 | 2006-06-14 08:00 | 2006-06-14 17:00 | 1d? |  |  |  |  | 26h | 24 |  |
| 110 | 1.2.1.2.1 | 准备评审 |  | 0.25d | 2020-06-22 08:00 | 2020-06-22 10:00 |  | 2006-06-14 08:00 | 2006-06-14 17:00 | 1d? | 65.25d | 0d | start no earlier than 2020-06-22 08:00 | 李明强 | 2h | 8 | 《用户需求说明书评审准备表》 |
| 111 | 1.2.1.2.2 | 举行评审会议 |  | 0.5d | 2020-06-22 10:00 | 2020-06-22 15:00 | 110 | 2006-06-14 08:00 | 2006-06-14 17:00 | 1d? | 65.25d |  | start no earlier than 2020-04-08 08:00 | 李刚; 张宝杰; 高翔; 李明强; 庄新胜; 邱辉; 韩帅; 徐长乐; 秦丕文 | 18h | 8 | 《评审会议纪要》 |
| 112 | 1.2.1.2.3 | **修正、跟踪与审核** |  | 1.12d | 2020-06-23 08:00 | 2020-06-23 18:00 |  | 2006-06-14 08:00 | 2006-06-14 17:00 | 1d? |  |  |  |  | 6h |  |  |
| 113 | 1.2.1.2.3.1 | 修正工作产品 |  | 0.5d | 2020-06-23 08:00 | 2020-06-23 12:00 |  |  |  |  | 64.5d |  | start no earlier than 2020-06-23 08:00 | 高翔 | 4h |  | 修正后的工作产品：《用户需求说明书》 |
| 114 | 1.2.1.2.3.2 | 修改后的工作产品的确认 |  | 0.25d | 2020-06-23 08:00 | 2020-06-23 10:00 |  |  |  |  | 64.75d |  | start no earlier than 2020-06-23 08:00 | 李明强 | 2h |  | 《用户需求说明书评审报告》 |
| 115 | 1.2.1.3 | 新建《需求跟踪矩阵》 |  | 0.25d | 2020-06-23 08:00 | 2020-06-23 10:00 |  |  |  |  | 63.25d | 0.75d | start no earlier than 2020-06-23 08:00 | 高翔 | 2h |  | 《需求跟踪矩阵》 |

| ID | WBS | Task | Type | Duration | Start | Finish | Predecessors | Baseline start | Baseline finish | Baseline duration | Total slack | Free slack | Constraint | Resources | Work | Baseline cost | Text1 |
| --- | --- | --- | --- | --- | --- | --- | --- | --- | --- | --- | --- | --- | --- | --- | --- | --- | --- |
| 116 | 1.2.1.4 | **系统需求定义** |  | 6.12d | 2020-06-24 08:00 | 2020-06-30 18:00 | 115 | 2006-06-14 08:00 | 2006-06-14 14:00 | 5h |  |  |  |  | 32h | 5 |  |
| 117 | 1.2.1.4.1 | 制作业务模型、数据字典（可选） |  | 1d | 2020-06-24 08:00 | 2020-06-24 17:00 |  |  |  |  | 63d |  | start no earlier than 2020-06-24 08:00 | 高翔 | 8h |  | 业务模型、数据字典 |
| 118 | 1.2.1.4.2 | 撰写《产品需求规格说明书》 |  | 1.5d | 2020-06-28 08:00 | 2020-06-29 12:00 |  |  |  |  | 59.5d |  | start no earlier than 2020-06-28 08:00 | 高翔 | 12h |  | 《产品需求规格说明书》 |
| 119 | 1.2.1.4.3 | 制作系统开发原型Demo |  | 1.5d | 2020-06-29 08:00 | 2020-06-30 12:00 | 109 |  |  |  | 58.5d |  | start no earlier than 2020-06-29 08:00 | 高翔 | 12h |  |  |
| 120 | 1.2.1.5 | **产品需求评审(正式评审)** |  | 2.12d | 2020-07-01 08:00 | 2020-07-02 18:00 |  |  |  |  |  |  |  |  | 24h |  |  |
| 121 | 1.2.1.5.1 | 准备评审 |  | 0.25d | 2020-07-01 08:00 | 2020-07-01 10:00 |  | 2006-06-14 08:00 | 2006-06-14 17:00 | 1d? | 57.75d |  | start no earlier than 2020-07-01 08:00 | 李明强 | 2h | 8 | 《评审准备表》 |
| 122 | 1.2.1.5.2 | 举行评审会议 |  | 0.5d | 2020-07-01 08:00 | 2020-07-01 12:00 |  | 2006-06-14 08:00 | 2006-06-14 17:00 | 1d? | 57.25d | 0d | start no earlier than 2020-07-01 08:00 | 李刚; 张宝杰; 高翔; 李明强; 庄新胜; 邱辉; 韩帅; 徐长乐; 秦丕文 | 18h | 8 | 《评审会议记录》 |
| 123 | 1.2.1.5.3 | **修正、跟踪与审核** |  | 1.25d | 2020-07-01 08:00 | 2020-07-02 10:00 |  | 2006-06-14 08:00 | 2006-06-14 17:00 | 1d? |  |  |  |  | 4h |  |  |
| 124 | 1.2.1.5.3.1 | 修正工作产品 | manual | 0.25d | 2020-07-01 08:00 | 2020-07-01 10:00 | 122 |  |  |  |  |  | start no earlier than 2020-07-01 08:00 | 高翔 | 2h |  | 修正后的工作产品：《产品需求规格说明书》 |
| 125 | 1.2.1.5.3.2 | 修改后的工作产品的确认 | manual | 0.25d | 2020-07-02 08:00 | 2020-07-02 10:00 | 122 |  |  |  |  |  | start no earlier than 2020-07-02 08:00 | 李明强 | 2h |  | 《产品需求规格说明书评审报告》 |
| 126 | 1.2.1.6 | 更新《需求跟踪矩阵》 |  | 0.12d | 2020-07-02 08:00 | 2020-07-02 09:00 |  |  |  |  | -0.12d | 0d | start no earlier than 2020-07-02 08:00 | 高翔 | 1h |  | 《需求跟踪矩阵》《项目变更申请表》《项目变更记录表》 |
| 127 | 1.2.2 | **系统设计** |  | 14.12d | 2020-07-06 08:00 | 2020-07-21 18:00 | 104 |  |  |  |  |  |  |  | 160h |  |  |
| 128 | 1.2.2.1 | 撰写《技术解决方案》 |  | 0.5d | 2020-07-06 08:00 | 2020-07-06 12:00 |  |  |  |  | 54d | 0d | start no earlier than 2020-07-06 08:00 | 秦丕文 | 4h |  | 《技术解决方案》 |
| 129 | 1.2.2.2 | 对于多方案进行决策(可选) |  | 0.5d | 2020-07-06 13:00 | 2020-07-06 17:00 | 128 |  |  |  | 54d |  | finish no earlier than 2020-04-28 18:00 | 庄新胜; 邱辉; 秦丕文 | 12h |  |  |
| 130 | 1.2.2.3 | **概要设计与数据库设计** |  | 4.12d | 2020-07-07 08:00 | 2020-07-10 18:00 |  | 2006-06-14 08:00 | 2006-06-14 17:00 | 1d? |  |  |  |  | 34h |  |  |
| 131 | 1.2.2.3.1 | 撰写概要设计文档与数据库设计文档 |  | 3.75d | 2020-07-07 08:00 | 2020-07-10 15:00 |  |  |  |  | 50.25d |  | start no earlier than 2020-07-07 08:00 | 秦丕文 | 30h |  | 《概要设计说明书》、《数据库设计说明书》 |
| 132 | 1.2.2.3.2 | 购买复用分析 |  | 0.25d | 2020-07-10 08:00 | 2020-07-10 10:00 |  |  |  |  | 1.75d | 0.75d | start no earlier than 2020-07-10 08:00 | 高翔; 秦丕文 | 4h |  | 《概要设计说明书》、《数据库设计说明书》 |
| 133 | 1.2.2.4 | **概要设计数据库设计评审(正式评审)** |  | 2.12d | 2020-07-11 08:00 | 2020-07-13 18:00 | 132 | 2006-06-14 08:00 | 2006-06-14 17:00 | 1d? |  |  |  |  | 34h |  |  |
| 134 | 1.2.2.4.1 | 准备评审 |  | 0.25d | 2020-07-11 08:00 | 2020-07-11 10:00 |  | 2006-06-14 08:00 | 2006-06-14 17:00 | 1d? | 48.5d | 0d | start no earlier than 2020-07-11 08:00 | 李明强 | 2h | 8 | 《评审准备表》 |
| 135 | 1.2.2.4.2 | 举行评审会议 |  | 0.5d | 2020-07-11 10:00 | 2020-07-11 15:00 | 134 | 2006-06-14 08:00 | 2006-06-14 17:00 | 1d? | 48.5d | 0.25d | finish no earlier than 2020-05-03 18:00 | 李刚; 张宝杰; 高翔; 李明强; 庄新胜; 邱辉; 徐长乐; 秦丕文 | 24h | 8 | 《设计评审会议纪要》 |
| 136 | 1.2.2.4.3 | **修正、跟踪与审核** |  | 1.12d | 2020-07-13 08:00 | 2020-07-13 18:00 |  | 2006-06-14 08:00 | 2006-06-14 17:00 | 1d? |  |  |  |  | 8h |  |  |
| 137 | 1.2.2.4.3.1 | 修正工作产品 |  | 0.75d | 2020-07-13 08:00 | 2020-07-13 15:00 | 135 |  |  |  | 48.25d |  | start no earlier than 2020-07-13 08:00 | 秦丕文 | 6h |  | 修正后的工作产品：《概要设计说明书》、《数据库设计说明书》 |
| 138 | 1.2.2.4.3.2 | 修改后的工作产品的确认 |  | 0.25d | 2020-07-13 15:00 | 2020-07-13 18:00 |  |  |  |  | 48d |  | finish no earlier than 2020-07-13 18:00 | 李明强 | 2h |  | 《设计说明书评审报告》 |
| 139 | 1.2.2.5 | **详细设计** |  | 5.12d | 2020-07-14 08:00 | 2020-07-18 18:00 |  | 2006-06-14 08:00 | 2006-06-14 17:00 | 1d? |  |  |  |  | 44h |  | 《详细设计说明书》 |
| 140 | 1.2.2.5.1 | 自助办证模块设计 |  | 1.5d | 2020-07-14 08:00 | 2020-07-15 12:00 |  |  |  |  | 44.5d | 1.5d | start no earlier than 2020-07-14 08:00 | 秦丕文 | 12h |  |  |
| 141 | 1.2.2.5.2 | 检索查询模块设计 |  | 1.5d | 2020-07-15 08:00 | 2020-07-16 12:00 | 133 |  |  |  | 45.5d |  | start no earlier than 2020-07-15 08:00 | 秦丕文 | 16h |  |  |
| 142 | 1.2.2.5.3 | 自助借还模块设计 |  | 2d | 2020-07-17 08:00 | 2020-07-18 17:00 | 140 |  |  |  | 43d |  | start no earlier than 2020-07-17 08:00 | 秦丕文 | 16h |  |  |

| ID | WBS | Task | Type | Duration | Start | Finish | Predecessors | Baseline start | Baseline finish | Baseline duration | Total slack | Free slack | Constraint | Resources | Work | Baseline cost | Text1 |
| --- | --- | --- | --- | --- | --- | --- | --- | --- | --- | --- | --- | --- | --- | --- | --- | --- | --- |
| 143 | 1.2.2.6 | **详细设计评审(正式评审)** |  | 1.75d | 2020-07-20 08:00 | 2020-07-21 15:00 |  | 2006-06-14 08:00 | 2006-06-14 17:00 | 1d? |  |  |  |  | 32h |  |  |
| 144 | 1.2.2.6.1 | 准备评审 | manual | 0.5d | 2020-07-20 08:00 | 2020-07-20 12:00 |  | 2006-06-14 08:00 | 2006-06-14 17:00 | 1d? |  |  |  | 秦丕文 | 2h | 8 | 《评审准备表》 |
| 145 | 1.2.2.6.2 | 举行评审会议 | manual | 0.5d | 2020-07-20 08:00 | 2020-07-20 12:00 | 144 | 2006-06-14 08:00 | 2006-06-14 17:00 | 1d? |  |  |  | 李刚; 张宝杰; 高翔; 李明强; 庄新胜; 邱辉; 徐长乐; 秦丕文 | 24h | 8 | 《会议纪要》 |
| 146 | 1.2.2.6.3 | **修正、跟踪与审核** |  | 0.75d | 2020-07-21 08:00 | 2020-07-21 15:00 | 145 | 2006-06-14 08:00 | 2006-06-14 17:00 | 1d? |  |  |  |  | 6h |  |  |
| 147 | 1.2.2.6.3.1 | 修正工作产品 | manual | 0.5d | 2020-07-21 08:00 | 2020-07-21 12:00 | 145 |  |  |  |  |  |  | 秦丕文 | 4h |  | 修正后的工作产品：《详细设计说明书》 |
| 148 | 1.2.2.6.3.2 | 修改后的工作产品的确认 | manual | 0.25d | 2020-07-21 08:00 | 2020-07-21 10:00 |  |  |  |  |  |  | start no earlier than 2020-07-21 08:00 | 李明强 | 2h |  | 《详细设计评审报告》 |
| 149 | 1.2.3 | **编码实现** |  | 26.12d | 2020-07-21 08:00 | 2020-08-19 18:00 | 127 | 2006-06-14 08:00 | 2006-06-14 17:00 | 1d? |  |  |  |  | 537h |  |  |
| 150 | 1.2.3.1 | 制定编码计划 |  | 0.25d | 2020-07-21 08:00 | 2020-07-21 10:00 |  |  |  |  | 40.25d | 0d | start no earlier than 2020-07-21 08:00 | 徐长乐 | 2h |  |  |
| 151 | 1.2.3.2 | 构建数据库 |  | 1.5d | 2020-07-21 10:00 | 2020-07-22 15:00 | 150 |  |  |  | 40.25d |  | finish no earlier than 2020-05-23 18:00 | 庄新胜; 邱辉; 徐长乐 | 36h |  | 产品数据库 |
| 152 | 1.2.3.3 | **编码实现模块功能** |  | 18.12d | 2020-07-23 08:00 | 2020-08-12 18:00 |  |  |  |  |  |  |  |  | 432h |  | 程序源代码 |
| 153 | 1.2.3.3.1 | 自助办证模块 |  | 13.5d | 2020-07-23 08:00 | 2020-08-07 12:00 |  |  |  |  | 26.5d |  | start no earlier than 2020-07-23 08:00 | 邱辉 | 108h |  |  |
| 154 | 1.2.3.3.2 | 检索查询模块 |  | 18d | 2020-07-23 08:00 | 2020-08-12 17:00 |  |  |  |  | 22d |  | start no earlier than 2020-07-23 08:00 | 庄新胜 | 144h |  |  |
| 155 | 1.2.3.3.3 | 自助借还模块 |  | 18d | 2020-07-23 08:00 | 2020-08-12 18:00 |  |  |  |  | 22d |  | finish no earlier than 2020-08-12 18:00 | 邱辉 [25%]; 徐长乐 | 180h |  |  |
| 156 | 1.2.3.4 | **代码走查** |  | 4.12d | 2020-08-13 08:00 | 2020-08-17 18:00 |  |  |  |  |  |  |  |  | 48h |  | bug记录 代码走查检查单 |
| 157 | 1.2.3.4.1 | 自助办证模块 |  | 1d | 2020-08-13 08:00 | 2020-08-13 17:00 |  |  |  |  | 21d |  | start no earlier than 2020-08-13 08:00 | 庄新胜; 高翔; 邱辉; 徐长乐 | 16h |  |  |
| 158 | 1.2.3.4.2 | 检索查询模块 |  | 1d | 2020-08-14 08:00 | 2020-08-14 17:00 |  |  |  |  | 20d |  | start no earlier than 2020-08-14 08:00 | 徐长乐; 高翔; 庄新胜; 邱辉 | 16h |  |  |
| 159 | 1.2.3.4.3 | 自助借还模块 |  | 1d | 2020-08-17 08:00 | 2020-08-17 17:00 |  |  |  |  | 18d |  | start no earlier than 2020-08-17 08:00 | 邱辉; 高翔; 庄新胜; 徐长乐 | 16h |  |  |
| 160 | 1.2.3.5 | **编写支持文档** |  | 2.12d | 2020-08-18 08:00 | 2020-08-19 18:00 | 156 |  |  |  |  |  |  |  | 12h |  |  |
| 161 | 1.2.3.5.1 | 编写《用户操作手册》 |  | 1.5d | 2020-08-18 13:00 | 2020-08-19 18:00 |  |  |  |  | 16d |  | finish no earlier than 2020-08-19 18:00 | 庄新胜 | 12h |  | 《用户手册》《维护手册》 |
| 162 | 1.2.3.5.2 | 评审支持文档(非正式评审) |  | 0.19d | 2020-08-19 08:00 | 2020-08-19 09:30 |  |  |  |  | 16.81d |  | start no earlier than 2020-08-19 08:00 | 张宝杰 [66.7%]; 高翔 [66.7%]; 李明强 [66.7%]; 庄新胜 [66.7%]; 邱辉 [66.7%]; 徐长乐 [66.7%]; 秦丕文 [66.7%] | 7h |  | 《评审准备表》、《评审报告》、《会议纪要》 |
| 163 | 1.2.4 | **产品集成** |  | 2.12d | 2020-08-20 08:00 | 2020-08-21 18:00 | 156 |  |  |  |  |  |  |  | 35h |  |  |
| 164 | 1.2.4.1 | 制定《产品集成计划》 |  | 0.5d | 2020-08-20 13:00 | 2020-08-20 18:00 |  |  |  |  | 15d |  | finish no earlier than 2020-08-20 18:00 | 高翔 | 4h |  |  |
| 165 | 1.2.4.2 | 评审《产品集成计划》 |  | 0.19d | 2020-08-20 08:00 | 2020-08-20 09:29 | 164 |  |  |  | 15.81d |  | start no earlier than 2020-08-20 08:00 | 张宝杰 [67%]; 高翔 [67%]; 李明强 [67%]; 庄新胜 [67%]; 邱辉 [67%]; 徐长乐 [67%]; 秦丕文 [67%] | 7h |  | 评审报告、会议纪要 |
| 166 | 1.2.4.3 | 审查接口的兼容性 |  | 0.5d | 2020-08-20 13:00 | 2020-08-20 18:00 |  |  |  |  | 15d |  | finish no earlier than 2020-08-20 18:00 | 邱辉; 徐长乐 | 8h |  | 《接口关系表》 |
| 167 | 1.2.4.4 | 组装产品组件 |  | 1d | 2020-08-21 08:00 | 2020-08-21 18:00 |  |  |  |  | 14d |  | finish no earlier than 2020-08-21 18:00 | 邱辉; 徐长乐 | 16h |  | 《接口关系表》 |

| ID | WBS | Task | Type | Duration | Start | Finish | Predecessors | Baseline start | Baseline finish | Baseline duration | Total slack | Free slack | Constraint | Resources | Work | Baseline cost | Text1 |
| --- | --- | --- | --- | --- | --- | --- | --- | --- | --- | --- | --- | --- | --- | --- | --- | --- | --- |
| 168 | 1.2.5 | **系统测试** |  | 6.12d | 2020-08-22 08:00 | 2020-08-28 18:00 |  | 2006-06-14 08:00 | 2006-06-14 17:00 | 1d? |  |  |  |  | 86.71h |  |  |
| 169 | 1.2.5.1 | 制定《系统测试计划》 |  | 0.5d | 2020-08-22 08:00 | 2020-08-22 12:00 |  |  |  |  | 13.22d | 0d | start no earlier than 2020-08-22 08:00 | 徐长乐 | 4h |  | 《系统测试计划》 |
| 170 | 1.2.5.2 | 评审《系统测试计划》 |  | 0.28d | 2020-08-22 13:00 | 2020-08-22 15:14 | 169 |  |  |  | 13.22d |  | finish no earlier than 2020-07-09 18:00 | 张宝杰 [44.5%]; 高翔 [44.5%]; 李明强 [44.5%]; 庄新胜 [44.5%]; 邱辉 [44.5%]; 徐长乐 [44.5%]; 秦丕文 [44.5%] | 7h |  | 评审报告、会议纪要 |
| 171 | 1.2.5.3 | 编写《系统测试用例》 | manual | 1.5d | 2020-08-22 08:00 | 2020-08-24 12:00 |  |  |  |  |  |  | start no earlier than 2020-08-22 08:00 | 徐长乐 | 12h |  | 《系统测试用例》 |
| 172 | 1.2.5.4 | **评审《系统测试用例》** |  | 1.12d | 2020-08-25 08:00 | 2020-08-25 18:00 | 171 |  |  |  |  |  |  |  | 24h |  |  |
| 173 | 1.2.5.4.1 | 评审准备 |  | 0.25d | 2020-08-25 08:00 | 2020-08-25 10:00 | 171 | 2006-06-14 08:00 | 2006-06-14 17:00 | 1d? | 11d | 0d | start no earlier than 2020-08-25 08:00 | 徐长乐 | 2h | 8 | 《评审准备表》 |
| 174 | 1.2.5.4.2 | 举行评审会议 |  | 0.25d | 2020-08-25 10:00 | 2020-08-25 12:00 | 173 |  |  |  | 11d | 0d | finish no earlier than 2020-07-13 18:00 | 李刚; 张宝杰; 高翔; 李明强; 庄新胜; 邱辉; 徐长乐; 秦丕文 | 16h |  | 《会议记录》 |
| 175 | 1.2.5.4.3 | **修正、跟踪与审核** |  | 1.12d | 2020-08-25 08:00 | 2020-08-25 18:00 | 174 | 2006-06-14 08:00 | 2006-06-14 17:00 | 1d? |  |  |  |  | 6h |  |  |
| 176 | 1.2.5.4.3.1 | 修正工作产品 |  | 0.5d | 2020-08-25 08:00 | 2020-08-25 12:00 |  |  |  |  | 11.5d |  | start no earlier than 2020-08-25 08:00 | 徐长乐 | 4h |  | 修正后的工作产品：《系统测试用例》 |
| 177 | 1.2.5.4.3.2 | 修改后的工作产品的确认 |  | 0.25d | 2020-08-25 08:00 | 2020-08-25 10:00 |  |  |  |  | 11.75d |  | start no earlier than 2020-08-25 08:00 | 李明强 | 2h |  | 《系统测试用例评审报告》 |
| 178 | 1.2.5.5 | **执行系统测试** |  | 3.12d | 2020-08-26 08:00 | 2020-08-28 18:00 | 149 |  |  |  |  |  |  |  | 39.71h |  |  |
| 179 | 1.2.5.5.1 | 搭建系统测试环境 |  | 0.5d | 2020-08-26 08:00 | 2020-08-26 12:00 |  |  |  |  | 8.51d | 0d | start no earlier than 2020-08-26 08:00 | 徐长乐 | 4h |  |  |
| 180 | 1.2.5.5.2 | 执行系统测试用例 |  | 1.5d | 2020-08-26 13:00 | 2020-08-27 18:00 | 179 |  |  |  | 9d |  | finish no earlier than 2020-08-27 18:00 | 徐长乐 | 12h |  |  |
| 181 | 1.2.5.5.3 | 记录并跟踪缺陷 |  | 1.47d | 2020-08-26 13:14 | 2020-08-27 18:00 | 179 |  |  |  | 9d |  | finish no earlier than 2020-08-27 18:00 | 徐长乐 [17%] | 2h |  | 《系统测试用例》、《BUG记录单》 |
| 182 | 1.2.5.5.4 | 修改缺陷 |  | 1.99d | 2020-08-26 13:00 | 2020-08-28 11:56 | 179 |  |  |  | 8.51d |  | start no earlier than 2020-07-16 08:00 | 庄新胜 [26%]; 邱辉 [26%]; 徐长乐 [34%] | 13.71h |  | 代码 |
| 183 | 1.2.5.5.5 | 撰写《系统测试报告》 |  | 1d | 2020-08-28 08:00 | 2020-08-28 18:00 |  |  |  |  | 0d |  | finish no earlier than 2020-08-28 18:00 | 徐长乐 | 8h |  | 《系统测试报告》 |
| 184 | 1.2.6 | **产品交付** |  | 6.12d | 2020-08-29 08:00 | 2020-09-04 18:00 | 183 | 2006-06-14 08:00 | 2006-06-14 17:00 | 1d? |  |  |  |  | 55.6h |  |  |
| 185 | 1.2.6.1 | 产品打包交付 |  | 0.5d | 2020-08-29 08:00 | 2020-08-29 12:00 |  |  |  |  | 7.5d |  | start no earlier than 2020-08-29 08:00 | 高翔 | 4h |  | 《产品打包清单》 |
| 186 | 1.2.6.2 | 用户使用培训 |  | 0.25d | 2020-08-29 08:00 | 2020-08-29 10:00 |  |  |  |  | 7.75d |  | start no earlier than 2020-08-29 08:00 | 高翔 | 2h |  |  |
| 187 | 1.2.6.3 | **用户验收测试** |  | 6.12d | 2020-08-29 08:00 | 2020-09-04 18:00 |  |  |  |  |  |  |  |  | 48h |  |  |
| 188 | 1.2.6.3.1 | 编写验收测试计划 |  | 0.5d | 2020-08-29 08:00 | 2020-08-29 12:00 |  |  |  |  | 7.5d |  | start no earlier than 2020-08-29 08:00 | 徐长乐 | 4h |  |  |
| 189 | 1.2.6.3.2 | 编写验收测试用例 |  | 2.5d | 2020-08-31 08:00 | 2020-09-02 12:00 |  |  |  |  | 4.5d |  | start no earlier than 2020-08-31 08:00 | 徐长乐 [80%] | 16h |  |  |
| 190 | 1.2.6.3.3 | 执行验收测试 |  | 1.5d | 2020-09-03 08:00 | 2020-09-04 12:00 | 189 |  |  |  | 2.5d |  | start no earlier than 2020-09-03 08:00 | 韩帅; 徐长乐 | 24h |  |  |
| 191 | 1.2.6.3.4 | 编写验收测试报告 |  | 0.5d | 2020-09-04 08:00 | 2020-09-04 12:00 | 190 |  |  |  | 2.4d | 0d | start no earlier than 2020-09-04 08:00 | 高翔 | 4h |  |  |
| 192 | 1.2.6.4 | 编写《客户验收报告》,双方签字确认 |  | 0.1d | 2020-09-04 13:00 | 2020-09-04 13:48 | 191 |  |  |  | 2.4d |  | finish no earlier than 2020-07-27 18:00 | 高翔; 韩帅 | 1.6h |  | 《产品交接验收单》、《客户验收报告》 |

| ID | WBS | Task | Duration | Start | Finish | Complete | Remaining | Baseline start | Baseline duration | Total slack | Constraint | Resources | Work | Actual work |
| --- | --- | --- | --- | --- | --- | --- | --- | --- | --- | --- | --- | --- | --- | --- |
| 193 | 1.3 | **支持过程** | 77.12d | 2020-06-05 08:00 A | 2020-09-07 18:00 |  | 76.76d |  |  |  |  |  | 86.46h | 8.96h |
| 194 | 1.3.1 | **质量保证** | 77.12d | 2020-06-05 08:00 | 2020-09-07 18:00 |  |  |  |  |  |  |  | 48.96h |  |
| 195 | 1.3.1.1 | **过程和产品检查** | 77.12d | 2020-06-05 08:00 | 2020-09-07 18:00 |  |  | 2016-10-12 08:00 | 91d |  |  |  | 36.96h |  |
| 196 | 1.3.1.1.1 | 过程和产品检查 | 77d | 2020-06-05 08:00 | 2020-09-07 18:00 |  |  |  |  | 0d | finish no earlier than 2020-09-07 18:00 | 李明强 [2%] | 12.32h |  |
| 197 | 1.3.1.1.2 | 不符合项目报告编制 | 77d | 2020-06-05 08:00 | 2020-09-07 18:00 |  |  |  |  | 0d | finish no earlier than 2020-09-07 18:00 | 李明强 [2%] | 12.32h |  |
| 198 | 1.3.1.1.3 | 不一致问题跟踪 | 77d | 2020-06-05 08:00 | 2020-09-07 18:00 |  |  |  |  | 0d | finish no earlier than 2020-09-07 18:00 | 李明强 [2%] | 12.32h |  |
| 199 | 1.3.1.2 | **QA里程碑报告编制** | 42.12d | 2020-07-21 08:00 | 2020-09-07 18:00 |  |  |  |  |  |  |  | 12h |  |
| 200 | 1.3.1.2.1 | 计划、需求与设计里程碑评审 | 0.5d | 2020-07-21 08:00 | 2020-07-21 12:00 |  |  |  |  | 41.5d | start no earlier than 2020-07-21 08:00 | 李明强 | 4h |  |
| 201 | 1.3.1.2.2 | 编码与集成里程碑评审 | 0.5d | 2020-08-21 08:00 | 2020-08-21 12:00 |  |  |  |  | 14.5d | start no earlier than 2020-08-21 08:00 | 李明强 | 4h |  |
| 202 | 1.3.1.2.3 | 测试、实施与结项里程碑评审 | 0.5d | 2020-09-07 08:00 | 2020-09-07 12:00 |  |  |  |  | 0.5d | start no earlier than 2020-09-07 08:00 | 李明强 | 4h |  |
| 203 | 1.3.2 | **配置管理** | 74.12d | 2020-06-10 08:00 A | 2020-09-07 18:00 | 24% | 56.41d |  |  |  |  |  | 37.5h | 8.96h |
| 204 | 1.3.2.1 | 创建配置库、分配人员权限 | 0.25d | 2020-06-10 08:00 A | 2020-06-10 10:00 A | 100% |  |  |  |  | finish no earlier than 2020-03-12 18:00 | 张宝杰 | 2h | 2h |
| 205 | 1.3.2.2 | **需求结束后基线** | 1d | 2020-07-03 08:00 | 2020-07-03 18:00 |  |  |  |  | 55d |  |  | 4.5h |  |
| 206 | 1.3.2.2.1 | 基线创建申请 | 0.06d | 2020-07-03 08:00 | 2020-07-03 08:30 |  |  |  |  | 55.94d | start no earlier than 2020-07-03 08:00 | 张宝杰 | 0.5h |  |
| 207 | 1.3.2.2.2 | 功能和物理审计 | 0.25d | 2020-07-03 15:00 | 2020-07-03 18:00 |  |  |  |  | 55d | finish no earlier than 2020-07-03 18:00 | 张宝杰 | 2h |  |
| 208 | 1.3.2.2.3 | 基线域中创建基线 | 0.12d | 2020-07-03 08:00 | 2020-07-03 09:00 |  |  |  |  | 55.88d | start no earlier than 2020-07-03 08:00 | 张宝杰 | 1h |  |
| 209 | 1.3.2.2.4 | 基线发布 | 0.12d | 2020-07-03 08:00 | 2020-07-03 09:00 |  |  |  |  | 55.88d | start no earlier than 2020-07-03 08:00 | 张宝杰 | 1h |  |
| 210 | 1.3.2.3 | **设计结束后基线** | 1d | 2020-07-22 08:00 | 2020-07-22 17:00 |  |  |  |  |  |  |  | 4.5h |  |
| 211 | 1.3.2.3.1 | 基线创建申请 | 0.06d | 2020-07-22 08:00 | 2020-07-22 08:30 |  |  |  |  | 40.94d | start no earlier than 2020-07-22 08:00 | 张宝杰 | 0.5h |  |
| 212 | 1.3.2.3.2 | 功能和物理审计 | 0.25d | 2020-07-22 08:00 | 2020-07-22 10:00 |  |  |  |  | 40.75d | start no earlier than 2020-07-22 08:00 | 张宝杰 | 2h |  |
| 213 | 1.3.2.3.3 | 基线域中创建基线 | 0.12d | 2020-07-22 08:00 | 2020-07-22 09:00 |  |  |  |  | 40.88d | start no earlier than 2020-07-22 08:00 | 张宝杰 | 1h |  |
| 214 | 1.3.2.3.4 | 基线发布 | 0.12d | 2020-07-22 08:00 | 2020-07-22 09:00 |  |  |  |  | 40.88d | start no earlier than 2020-07-22 08:00 | 张宝杰 | 1h |  |
| 215 | 1.3.2.4 | **编码结束后基线** | 1.12d | 2020-08-20 08:00 | 2020-08-21 09:00 |  |  |  |  |  |  |  | 4.5h |  |
| 216 | 1.3.2.4.1 | 基线创建申请 | 0.06d | 2020-08-20 08:00 | 2020-08-20 08:30 |  |  |  |  | 15.94d | start no earlier than 2020-08-20 08:00 | 张宝杰 | 0.5h |  |
| 217 | 1.3.2.4.2 | 功能和物理审计 | 0.25d | 2020-08-20 08:00 | 2020-08-20 10:00 |  |  |  |  | 15.75d | start no earlier than 2020-08-20 08:00 | 张宝杰 | 2h |  |
| 218 | 1.3.2.4.3 | 基线域中创建基线 | 0.12d | 2020-08-20 08:00 | 2020-08-20 09:00 |  |  |  |  | 15.88d | start no earlier than 2020-08-20 08:00 | 张宝杰 | 1h |  |
| 219 | 1.3.2.4.4 | 基线发布 | 0.12d | 2020-08-20 08:00 | 2020-08-20 09:00 |  |  |  |  | 15.88d | start no earlier than 2020-08-20 08:00 | 张宝杰 | 1h |  |

| ID | WBS | Task | Duration | Start | Finish | Complete | Remaining | Total slack | Constraint | Resources | Work | Actual work |
| --- | --- | --- | --- | --- | --- | --- | --- | --- | --- | --- | --- | --- |
| 220 | 1.3.2.5 | **系统测试结束后基线** | 1d | 2020-08-29 08:00 A | 2020-08-29 18:00 | 55% | 0.45d | 7d |  |  | 4.5h | 2.48h |
| 221 | 1.3.2.5.1 | 基线创建申请 | 0.06d | 2020-08-29 08:00 A | 2020-08-29 08:30 | 96% | 0d | 7.94d | finish no earlier than 2020-07-20 18:00 | 张宝杰 | 0.5h | 0.48h |
| 222 | 1.3.2.5.2 | 功能和物理审计 | 0.25d | 2020-08-29 15:00 | 2020-08-29 18:00 |  |  | 7d | finish no earlier than 2020-08-29 18:00 | 张宝杰 | 2h |  |
| 223 | 1.3.2.5.3 | 基线域中创建基线 | 0.12d | 2020-08-29 08:00 A | 2020-08-29 09:00 A | 100% |  |  | finish no earlier than 2020-07-20 18:00 | 张宝杰 | 1h | 1h |
| 224 | 1.3.2.5.4 | 基线发布 | 0.12d | 2020-08-29 08:00 A | 2020-08-29 09:00 A | 100% |  |  | finish no earlier than 2020-07-20 18:00 | 张宝杰 | 1h | 1h |
| 225 | 1.3.2.6 | **产品交付基线** | 1d | 2020-09-05 08:00 A | 2020-09-05 17:00 | 99% | 0d |  |  |  | 4.5h | 4.48h |
| 226 | 1.3.2.6.1 | 基线创建申请 | 0.06d | 2020-09-05 08:00 A | 2020-09-05 08:30 | 96% | 0d | 1.94d | finish no earlier than 2020-07-27 18:00 | 张宝杰 | 0.5h | 0.48h |
| 227 | 1.3.2.6.2 | 功能和物理审计 | 0.25d | 2020-09-05 08:00 A | 2020-09-05 10:00 A | 100% |  |  | finish no earlier than 2020-07-27 18:00 | 张宝杰 | 2h | 2h |
| 228 | 1.3.2.6.3 | 基线域中创建基线 | 0.12d | 2020-09-05 08:00 A | 2020-09-05 09:00 A | 100% |  |  | finish no earlier than 2020-07-27 18:00 | 张宝杰 | 1h | 1h |
| 229 | 1.3.2.6.4 | 基线发布 | 0.12d | 2020-09-05 08:00 A | 2020-09-05 09:00 A | 100% |  |  | finish no earlier than 2020-07-27 18:00 | 张宝杰 | 1h | 1h |
| 230 | 1.3.2.7 | **配置库备份和配置项状态跟踪** | 71.12d | 2020-06-15 08:00 | 2020-09-07 18:00 |  |  |  |  |  | 13h |  |
| 231 | 1.3.2.7.1 | 配置库备份和配置项状态跟踪 1 | 0.12d | 2020-06-15 08:00 | 2020-06-15 09:00 |  |  | 70.88d | start no earlier than 2020-06-15 08:00 | 张宝杰 | 1h |  |
| 232 | 1.3.2.7.2 | 配置库备份和配置项状态跟踪 2 | 0.12d | 2020-06-22 08:00 | 2020-06-22 09:00 |  |  | 65.88d | start no earlier than 2020-06-22 08:00 | 张宝杰 | 1h |  |
| 233 | 1.3.2.7.3 | 配置库备份和配置项状态跟踪 3 | 0.12d | 2020-06-29 08:00 | 2020-06-29 09:00 |  |  | 59.88d | start no earlier than 2020-06-29 08:00 | 张宝杰 | 1h |  |
| 234 | 1.3.2.7.4 | 配置库备份和配置项状态跟踪 4 | 0.12d | 2020-07-06 08:00 | 2020-07-06 09:00 |  |  | 54.88d | start no earlier than 2020-07-06 08:00 | 张宝杰 | 1h |  |
| 235 | 1.3.2.7.5 | 配置库备份和配置项状态跟踪 5 | 0.12d | 2020-07-13 08:00 | 2020-07-13 09:00 |  |  | 48.88d | start no earlier than 2020-07-13 08:00 | 张宝杰 | 1h |  |
| 236 | 1.3.2.7.6 | 配置库备份和配置项状态跟踪 6 | 0.12d | 2020-07-20 08:00 | 2020-07-20 09:00 |  |  | 42.88d | start no earlier than 2020-07-20 08:00 | 张宝杰 | 1h |  |
| 237 | 1.3.2.7.7 | 配置库备份和配置项状态跟踪 7 | 0.12d | 2020-07-27 08:00 | 2020-07-27 09:00 |  |  | 36.88d | start no earlier than 2020-07-27 08:00 | 张宝杰 | 1h |  |
| 238 | 1.3.2.7.8 | 配置库备份和配置项状态跟踪 8 | 0.12d | 2020-08-03 16:00 | 2020-08-03 18:00 |  |  | 30d | finish no earlier than 2020-08-03 18:00 | 张宝杰 | 1h |  |
| 239 | 1.3.2.7.9 | 配置库备份和配置项状态跟踪 9 | 0.12d | 2020-08-10 08:00 | 2020-08-10 09:00 |  |  | 24.88d | start no earlier than 2020-08-10 08:00 | 张宝杰 | 1h |  |
| 240 | 1.3.2.7.10 | 配置库备份和配置项状态跟踪 10 | 0.12d | 2020-08-17 08:00 | 2020-08-17 09:00 |  |  | 18.88d | start no earlier than 2020-08-17 08:00 | 张宝杰 | 1h |  |
| 241 | 1.3.2.7.11 | 配置库备份和配置项状态跟踪 11 | 0.12d | 2020-08-24 08:00 | 2020-08-24 09:00 |  |  | 12.88d | start no earlier than 2020-08-24 08:00 | 张宝杰 | 1h |  |
| 242 | 1.3.2.7.12 | 配置库备份和配置项状态跟踪 12 | 0.12d | 2020-08-31 08:00 | 2020-08-31 09:00 |  |  | 6.88d | start no earlier than 2020-08-31 08:00 | 张宝杰 | 1h |  |
| 243 | 1.3.2.7.13 | 配置库备份和配置项状态跟踪 13 | 0.12d | 2020-09-07 08:00 | 2020-09-07 09:00 |  |  | 0.88d | start no earlier than 2020-09-07 08:00 | 张宝杰 | 1h |  |
