# 项目进度表1

Schedule from MS Project, 2020-06-05 to 2020-09-09, status date 2017-09-23, A marks actual dates.
南瑞继保

## Calendars

- 标准: Mon-Fri 08:00-12:00, 13:00-17:00; Sat-Sun off. Exceptions (off unless hours are given): 2020-06-28 08:00-12:00, 13:00-17:00, 2020-07-18 08:00-12:00, 13:00-17:00, 2020-07-25 08:00-12:00, 13:00-17:00, 2020-08-01 08:00-12:00, 13:00-17:00, 2020-08-08 08:00-12:00, 13:00-17:00, 2020-08-15 08:00-12:00, 13:00-17:00, 2020-08-22 08:00-12:00, 13:00-17:00, 2020-08-29 08:00-12:00, 13:00-17:00, 2020-09-05 08:00-12:00, 13:00-17:00.
- 科创日历: Mon-Fri 08:00-12:00, 13:00-17:00; Sat-Sun off.

## Resources

| Resource | Group | Rate |
| --- | --- | --- |
| PM | 管理 | 1 |
| SM |  | 1 |
| QA | 质保 | 1 |
| CM | 配置 | 1 |
| CCB |  | 1 |
| 高翔 |  |  |
| 韩帅 |  |  |
| 李明强 |  |  |
| 张宝杰 |  |  |
| 庄新胜 |  |  |
| 邱辉 |  |  |
| 徐长乐 |  |  |
| 李刚 |  |  |
| 秦丕文 |  |  |

## Schedule

| ID | WBS | Task | Duration | Start | Finish | Predecessors | Remaining | Baseline start | Baseline finish | Baseline duration | Total slack | Free slack | Constraint | Resources | Work | Actual work | Baseline cost | Text1 |
| --- | --- | --- | --- | --- | --- | --- | --- | --- | --- | --- | --- | --- | --- | --- | --- | --- | --- | --- |
| 1 | 1 | **智能自助办证借还管理系统** | 78.12d | 2020-06-05 08:00 A | 2020-09-09 18:00 |  | 77.88d |  |  |  |  |  |  |  | 1294.61h | 8.96h |  |  |
| 2 | 1.1 | **项目管理** | 78.12d | 2020-06-05 08:00 | 2020-09-09 18:00 |  |  |  |  |  |  |  |  |  | 256h |  |  |  |
| 3 | 1.1.1 | **项目启动** | 0.25d | 2020-06-05 08:00 | 2020-06-05 10:00 |  |  |  |  |  |  |  |  |  | 18h |  |  |  |
| 4 | 1.1.1.1 | 项目启动会议 | 0.25d | 2020-06-05 08:00 | 2020-06-05 10:00 |  |  | 2006-06-14 08:00 | 2006-06-14 17:00 | 1d? | 74.25d | 0d | start no earlier than 2020-06-05 08:00 | 高翔; 韩帅; 李明强; 张宝杰; 庄新胜; 邱辉; 徐长乐; 李刚; 秦丕文 | 18h |  | 8 | 《项目启动会议纪要》 |
| 5 | 1.1.2 | **项目计划** | 22.12d | 2020-06-05 08:00 | 2020-07-03 18:00 | 3 |  |  |  |  |  |  |  |  | 57h |  |  |  |
| 6 | 1.1.2.1 | **初步计划** | 4.75d | 2020-06-05 10:00 | 2020-06-11 18:00 |  |  |  |  |  | 1d |  |  |  | 24h |  |  |  |
| 7 | 1.1.2.1.1 | 初步裁剪 | 0.5d | 2020-06-05 10:00 | 2020-06-05 15:00 | 4 |  | 2006-06-14 08:00 | 2006-06-14 17:00 | 1d? | 75d | 0d | start no earlier than 2020-06-05 08:00 | 高翔 | 4h |  |  | 《项目已定义过程》 |
| 8 | 1.1.2.1.2 | 初步估算（规模和工作量） | 0.5d | 2020-06-05 15:00 | 2020-06-08 10:00 | 7 |  |  |  |  | 75d | 0d | finish no earlier than 2020-03-13 18:00 | 高翔 | 4h |  |  | 《项目估算表》 |
| 9 | 1.1.2.1.3 | **制定项目初步计划及下属子计划** | 3.12d | 2020-06-09 08:00 | 2020-06-11 18:00 |  |  | 2006-06-14 08:00 | 2006-06-14 17:00 | 1d? |  |  |  |  | 15h |  |  |  |
| 10 | 1.1.2.1.3.1 | 制定初步的《项目计划》 | 1.5d | 2020-06-08 10:00 | 2020-06-09 15:00 | 8 |  |  |  |  | 75d | 1.25d | finish no earlier than 2020-03-15 18:00 | 高翔 [50%] | 6h |  |  | 《项目计划》初稿 |
| 11 | 1.1.2.1.3.2 | 制定初步的《质量保证计划》 | 0.75d | 2020-06-10 10:00 | 2020-06-10 18:00 |  |  | 2006-06-14 08:00 | 2006-06-14 17:00 | 1d? | 73.75d | 0d | finish no earlier than 2020-06-10 18:00 | 李明强 [50%] | 3h |  |  | 《质量保证计划》初稿 |
| 12 | 1.1.2.1.3.3 | 制定初步的《配置管理计划》 | 0.75d | 2020-06-10 08:00 | 2020-06-10 15:00 |  |  | 2006-06-14 08:00 | 2006-06-14 17:00 | 1d? | 74d | 0.25d | start no earlier than 2020-06-10 08:00 | 张宝杰 [50%] | 3h |  |  | 《配置管理计划》初稿 |
| 13 | 1.1.2.1.3.4 | 制定初步的《项目进度表》 | 0.75d | 2020-06-10 08:00 | 2020-06-10 15:00 |  |  |  |  |  | 74.25d |  | start no earlier than 2020-06-10 08:00 | 高翔 [50%] | 3h |  |  | 《项目进度表》初稿 |
| 14 | 1.1.2.1.4 | 初步项目计划及下属子计划审批 | 0.25d | 2020-06-11 08:00 | 2020-06-11 10:00 | 10, 11, 12 |  | 2006-06-14 08:00 | 2006-06-14 08:00 | 0d | 73.75d |  | finish no earlier than 2020-06-10 18:00 | 高翔 [50%] | 1h |  |  | 高级经理审批签字后的项目计划及下属子计划 |
| 15 | 1.1.2.2 | **详细计划** | 2.12d | 2020-07-02 08:00 | 2020-07-03 18:00 | 129 |  | 2006-06-14 08:00 | 2006-06-14 17:00 | 1d? |  |  |  |  | 33h |  |  |  |
| 16 | 1.1.2.2.1 | 详细裁剪 | 0.12d | 2020-07-02 08:00 | 2020-07-02 09:00 |  |  |  |  |  | 57.88d |  | start no earlier than 2020-07-02 08:00 | 高翔 | 1h |  |  |  |
| 17 | 1.1.2.2.2 | 详细估算（规模和工作量） | 0.5d | 2020-07-02 08:00 | 2020-07-02 12:00 |  |  | 2006-06-14 08:00 | 2006-06-14 17:00 | 1d? | 57.5d |  | start no earlier than 2020-07-02 08:00 | 高翔 | 4h |  |  | 《项目功能点复杂度估算》、《项目计划》中的“项目估算”内容、《项目估算表单(PERT)》 |
| 18 | 1.1.2.2.3 | **制定详细的《项目计划》及下属子计划** | 1.12d | 2020-07-02 08:00 | 2020-07-02 18:00 |  |  | 2006-06-14 08:00 | 2006-06-14 17:00 | 1d? |  |  |  |  | 5h |  |  |  |
| 19 | 1.1.2.2.3.1 | 更新《项目计划》 | 0.12d | 2020-07-02 08:00 | 2020-07-02 09:00 |  |  |  |  |  | 57.62d | 0d | start no earlier than 2020-07-02 08:00 | 高翔 | 1h |  |  | 《项目计划》终稿 |
| 20 | 1.1.2.2.3.2 | 更新《配置管理计划》 | 0.12d | 2020-07-02 09:00 | 2020-07-02 10:00 | 19 |  | 2006-06-14 08:00 | 2006-06-14 17:00 | 1d? | 57.62d | 0d | finish no earlier than 2020-04-26 18:00 | 张宝杰 | 1h |  |  | 《配置管理计划》终稿 |
| 21 | 1.1.2.2.3.3 | 更新《质量保证计划》 | 0.12d | 2020-07-02 10:00 | 2020-07-02 11:00 | 20 |  | 2006-06-14 08:00 | 2006-06-14 17:00 | 1d? | 57.62d |  | finish no earlier than 2020-04-26 18:00 | 李明强 | 1h |  |  | 《质量保证计划》终稿 |
| 22 | 1.1.2.2.3.4 | 更新《项目进度表》 | 0.25d | 2020-07-02 08:00 | 2020-07-02 10:00 |  |  | 2006-06-14 08:00 | 2006-06-14 17:00 | 1d? | 57.75d |  | start no earlier than 2020-07-02 08:00 | 高翔 | 2h |  |  | 《项目进度表》终稿 |
| 23 | 1.1.2.2.4 | **《项目计划》及下属子计划评审(管理评审)** | 1.12d | 2020-07-03 08:00 | 2020-07-03 18:00 |  |  |  |  |  |  |  |  |  | 23h |  |  |  |
| 24 | 1.1.2.2.4.1 | 准备评审 | 0.25d | 2020-07-03 08:00 | 2020-07-03 10:00 |  |  | 2006-06-14 08:00 | 2006-06-14 17:00 | 1d? | 56.75d |  | start no earlier than 2020-07-03 08:00 | 李明强 | 2h |  | 8 | 《项目计划评审准备表》 |
| 25 | 1.1.2.2.4.2 | 举行评审会议 | 0.5d | 2020-07-03 08:00 | 2020-07-03 12:00 |  |  | 2006-06-14 08:00 | 2006-06-14 17:00 | 1d? | 56.5d |  | start no earlier than 2020-07-03 08:00 | 高翔; 李明强; 张宝杰; 庄新胜; 邱辉; 徐长乐; 李刚; 秦丕文 | 16h |  | 8 | 《项目计划评审报告》《项目计划评审会议纪要》 |

| ID | WBS | Task | Duration | Start | Finish | Baseline start | Baseline finish | Baseline duration | Total slack | Constraint | Resources | Work | Text1 |
| --- | --- | --- | --- | --- | --- | --- | --- | --- | --- | --- | --- | --- | --- |
| 26 | 1.1.2.2.4.3 | **修正、跟踪与审核** | 0.5d | 2020-07-03 08:00 | 2020-07-03 12:00 | 2006-06-14 08:00 | 2006-06-14 17:00 | 1d? |  |  |  | 5h |  |
| 27 | 1.1.2.2.4.3.1 | 修正工作产品 | 0.5d | 2020-07-03 08:00 | 2020-07-03 12:00 |  |  |  | 56.5d | start no earlier than 2020-07-03 08:00 | 高翔 | 4h | 修正后的工作产品：《项目计划》及下属子计划 |
| 28 | 1.1.2.2.4.3.2 | 修改后的工作产品的确认 | 0.12d | 2020-07-03 08:00 | 2020-07-03 09:00 |  |  |  | 56.88d | start no earlier than 2020-07-03 08:00 | 李明强 | 1h | 《项目变更记录》 |
| 29 | 1.1.3 | **执行与控制** | 78.12d | 2020-06-05 08:00 | 2020-09-09 18:00 |  |  |  |  |  |  | 147h |  |
| 30 | 1.1.3.1 | **项目周报** | 70.12d | 2020-06-15 08:00 | 2020-09-07 18:00 |  |  |  |  |  |  | 6.5h |  |
| 31 | 1.1.3.1.1 | 项目周报 1 | 0.06d | 2020-06-15 08:00 | 2020-06-15 08:30 |  |  |  | 71.94d | start no earlier than 2020-06-15 08:00 | 高翔 | 0.5h |  |
| 32 | 1.1.3.1.2 | 项目周报 2 | 0.06d | 2020-06-22 08:00 | 2020-06-22 08:30 |  |  |  | 66.94d | start no earlier than 2020-06-22 08:00 | 高翔 | 0.5h |  |
| 33 | 1.1.3.1.3 | 项目周报 3 | 0.06d | 2020-06-29 08:00 | 2020-06-29 08:30 |  |  |  | 60.94d | start no earlier than 2020-06-29 08:00 | 高翔 | 0.5h |  |
| 34 | 1.1.3.1.4 | 项目周报 4 | 0.06d | 2020-07-06 08:00 | 2020-07-06 08:30 |  |  |  | 55.94d | start no earlier than 2020-07-06 08:00 | 高翔 | 0.5h |  |
| 35 | 1.1.3.1.5 | 项目周报 5 | 0.06d | 2020-07-13 08:00 | 2020-07-13 08:30 |  |  |  | 50.94d | start no earlier than 2020-07-13 08:00 | 高翔 | 0.5h |  |
| 36 | 1.1.3.1.6 | 项目周报 6 | 0.06d | 2020-07-20 08:00 | 2020-07-20 08:30 |  |  |  | 44.94d | start no earlier than 2020-07-20 08:00 | 高翔 | 0.5h |  |
| 37 | 1.1.3.1.7 | 项目周报 7 | 0.06d | 2020-07-27 08:00 | 2020-07-27 08:30 |  |  |  | 38.94d | start no earlier than 2020-07-27 08:00 | 高翔 | 0.5h |  |
| 38 | 1.1.3.1.8 | 项目周报 8 | 0.06d | 2020-08-03 08:00 | 2020-08-03 08:30 |  |  |  | 32.94d | start no earlier than 2020-08-03 08:00 | 高翔 | 0.5h |  |
| 39 | 1.1.3.1.9 | 项目周报 9 | 0.06d | 2020-08-10 08:00 | 2020-08-10 08:30 |  |  |  | 26.94d | start no earlier than 2020-08-10 08:00 | 高翔 | 0.5h |  |
| 40 | 1.1.3.1.10 | 项目周报 10 | 0.06d | 2020-08-17 08:00 | 2020-08-17 08:30 |  |  |  | 20.94d | start no earlier than 2020-08-17 08:00 | 高翔 | 0.5h |  |
| 41 | 1.1.3.1.11 | 项目周报 11 | 0.06d | 2020-08-24 08:00 | 2020-08-24 08:30 |  |  |  | 14.94d | start no earlier than 2020-08-24 08:00 | 高翔 | 0.5h |  |
| 42 | 1.1.3.1.12 | 项目周报 12 | 0.06d | 2020-08-31 08:00 | 2020-08-31 08:30 |  |  |  | 8.94d | start no earlier than 2020-08-31 08:00 | 高翔 | 0.5h |  |
| 43 | 1.1.3.1.13 | 项目周报 13 | 0.06d | 2020-09-07 08:00 | 2020-09-07 08:30 |  |  |  | 2.94d | start no earlier than 2020-09-07 08:00 | 高翔 | 0.5h |  |
| 44 | 1.1.3.2 | **项目周例会** | 70.12d | 2020-06-15 08:00 | 2020-09-07 18:00 |  |  |  |  |  |  | 104h |  |
| 45 | 1.1.3.2.1 | 项目周例会 1 | 0.12d | 2020-06-15 08:00 | 2020-06-15 09:00 |  |  |  | 71.88d | start no earlier than 2020-06-15 08:00 | 高翔; 李明强; 张宝杰; 庄新胜; 邱辉; 徐长乐; 李刚; 秦丕文 | 8h |  |
| 46 | 1.1.3.2.2 | 项目周例会 2 | 0.12d | 2020-06-22 08:00 | 2020-06-22 09:00 |  |  |  | 66.88d | start no earlier than 2020-06-22 08:00 | 高翔; 李明强; 张宝杰; 庄新胜; 邱辉; 徐长乐; 李刚; 秦丕文 | 8h |  |
| 47 | 1.1.3.2.3 | 项目周例会 3 | 0.12d | 2020-06-29 08:00 | 2020-06-29 09:00 |  |  |  | 60.88d | start no earlier than 2020-06-29 08:00 | 高翔; 李明强; 张宝杰; 庄新胜; 邱辉; 徐长乐; 李刚; 秦丕文 | 8h |  |
| 48 | 1.1.3.2.4 | 项目周例会 4 | 0.12d | 2020-07-06 08:00 | 2020-07-06 09:00 |  |  |  | 55.88d | start no earlier than 2020-07-06 08:00 | 高翔; 李明强; 张宝杰; 庄新胜; 邱辉; 徐长乐; 李刚; 秦丕文 | 8h |  |
| 49 | 1.1.3.2.5 | 项目周例会 5 | 0.12d | 2020-07-13 08:00 | 2020-07-13 09:00 |  |  |  | 50.88d | start no earlier than 2020-07-13 08:00 | 高翔; 李明强; 张宝杰; 庄新胜; 邱辉; 徐长乐; 李刚; 秦丕文 | 8h |  |
| 50 | 1.1.3.2.6 | 项目周例会 6 | 0.12d | 2020-07-20 08:00 | 2020-07-20 09:00 |  |  |  | 44.88d | start no earlier than 2020-07-20 08:00 | 高翔; 李明强; 张宝杰; 庄新胜; 邱辉; 徐长乐; 李刚; 秦丕文 | 8h |  |
| 51 | 1.1.3.2.7 | 项目周例会 7 | 0.12d | 2020-07-27 08:00 | 2020-07-27 09:00 |  |  |  | 38.88d | start no earlier than 2020-07-27 08:00 | 高翔; 李明强; 张宝杰; 庄新胜; 邱辉; 徐长乐; 李刚; 秦丕文 | 8h |  |
| 52 | 1.1.3.2.8 | 项目周例会 8 | 0.12d | 2020-08-03 08:00 | 2020-08-03 09:00 |  |  |  | 32.88d | start no earlier than 2020-08-03 08:00 | 高翔; 李明强; 张宝杰; 庄新胜; 邱辉; 徐长乐; 李刚; 秦丕文 | 8h |  |
| 53 | 1.1.3.2.9 | 项目周例会 9 | 0.12d | 2020-08-10 08:00 | 2020-08-10 09:00 |  |  |  | 26.88d | start no earlier than 2020-08-10 08:00 | 高翔; 李明强; 张宝杰; 庄新胜; 邱辉; 徐长乐; 李刚; 秦丕文 | 8h |  |
| 54 | 1.1.3.2.10 | 项目周例会 10 | 0.12d | 2020-08-17 08:00 | 2020-08-17 09:00 |  |  |  | 20.88d | start no earlier than 2020-08-17 08:00 | 高翔; 李明强; 张宝杰; 庄新胜; 邱辉; 徐长乐; 李刚; 秦丕文 | 8h |  |
| 55 | 1.1.3.2.11 | 项目周例会 11 | 0.12d | 2020-08-24 08:00 | 2020-08-24 09:00 |  |  |  | 14.88d | start no earlier than 2020-08-24 08:00 | 高翔; 李明强; 张宝杰; 庄新胜; 邱辉; 徐长乐; 李刚; 秦丕文 | 8h |  |
| 56 | 1.1.3.2.12 | 项目周例会 12 | 0.12d | 2020-08-31 08:00 | 2020-08-31 09:00 |  |  |  | 8.88d | start no earlier than 2020-08-31 08:00 | 高翔; 李明强; 张宝杰; 庄新胜; 邱辉; 徐长乐; 李刚; 秦丕文 | 8h |  |
| 57 | 1.1.3.2.13 | 项目周例会 13 | 0.12d | 2020-09-07 08:00 | 2020-09-07 09:00 |  |  |  | 2.88d | start no earlier than 2020-09-07 08:00 | 高翔; 李明强; 张宝杰; 庄新胜; 邱辉; 徐长乐; 李刚; 秦丕文 | 8h |  |

| ID | WBS | Task | Type | Duration | Start | Finish | Predecessors | Baseline start | Baseline finish | Baseline duration | Total slack | Free slack | Constraint | Calendar | Resources | Work | Text1 |
| --- | --- | --- | --- | --- | --- | --- | --- | --- | --- | --- | --- | --- | --- | --- | --- | --- | --- |
| 58 | 1.1.3.3 | **里程碑评审(管理评审)** |  | 42.38d | 2020-07-22 08:00 | 2020-09-09 11:02 |  | 2006-06-14 08:00 | 2006-06-14 17:00 | 1d? | 0d |  |  |  |  | 27h |  |
| 59 | 1.1.3.3.1 | **计划、需求与设计里程碑评审** |  | 0.64d | 2020-07-22 08:00 | 2020-07-22 14:07 |  |  |  |  |  |  |  |  |  | 9h |  |
| 60 | 1.1.3.3.1.1 | 评审准备 |  | 0.12d | 2020-07-22 08:00 | 2020-07-22 09:00 |  | 2006-06-14 08:00 | 2006-06-14 17:00 | 1d? | 42.88d |  | start no earlier than 2020-07-22 08:00 |  | 李明强 | 0.5h |  |
| 61 | 1.1.3.3.1.2 | 执行评审 |  | 0.12d | 2020-07-22 08:00 | 2020-07-22 09:00 |  | 2006-06-14 08:00 | 2006-06-14 17:00 | 1d? | 42.88d |  | start no earlier than 2020-07-22 08:00 |  | 高翔; 李明强; 张宝杰; 庄新胜; 邱辉; 徐长乐; 李刚; 秦丕文 | 8h |  |
| 62 | 1.1.3.3.1.3 | 后续工作 |  | 0.12d | 2020-07-22 08:00 | 2020-07-22 09:00 |  | 2006-06-14 08:00 | 2006-06-14 17:00 | 1d? | 42.88d |  | start no earlier than 2020-07-22 08:00 |  | 李明强 | 0.5h |  |
| 63 | 1.1.3.3.2 | **编码与集成里程碑评审** |  | 0.64d | 2020-08-21 08:00 | 2020-08-21 14:07 |  |  |  |  |  |  |  |  |  | 9h |  |
| 64 | 1.1.3.3.2.1 | 评审准备 |  | 0.13d | 2020-08-21 08:00 | 2020-08-21 09:02 |  | 2006-06-14 08:00 | 2006-06-14 17:00 | 1d? | 16.74d | 0d | start no earlier than 2020-08-21 08:00 |  | 李明强 | 0.5h |  |
| 65 | 1.1.3.3.2.2 | 执行评审 |  | 0.13d | 2020-08-21 09:02 | 2020-08-21 10:04 | 64 | 2006-06-14 08:00 | 2006-06-14 17:00 | 1d? | 16.74d |  | finish no earlier than 2020-06-29 18:00 |  | 高翔; 李明强; 张宝杰; 庄新胜; 邱辉; 徐长乐; 李刚; 秦丕文 | 8h |  |
| 66 | 1.1.3.3.2.3 | 后续工作 |  | 0.13d | 2020-08-21 10:00 | 2020-08-21 11:02 |  | 2006-06-14 08:00 | 2006-06-14 17:00 | 1d? | 16.62d |  | start no earlier than 2020-08-21 10:00 |  | 李明强 | 0.5h |  |
| 67 | 1.1.3.3.3 | **测试、实施与结项里程碑评审** |  | 0.38d | 2020-09-09 08:00 | 2020-09-09 11:02 |  |  |  |  |  |  |  |  |  | 9h |  |
| 68 | 1.1.3.3.3.1 | 评审准备 |  | 0.13d | 2020-09-09 08:00 | 2020-09-09 09:02 |  | 2006-06-14 08:00 | 2006-06-14 17:00 | 1d? | 0.87d |  | start no earlier than 2020-09-09 08:00 |  | 李明强 | 0.5h |  |
| 69 | 1.1.3.3.3.2 | 执行评审 |  | 0.13d | 2020-09-09 08:00 | 2020-09-09 09:02 |  | 2006-06-14 08:00 | 2006-06-14 17:00 | 1d? | 0.74d | 0d | start no earlier than 2020-09-09 08:00 |  | 高翔; 李明强; 张宝杰; 庄新胜; 邱辉; 徐长乐; 李刚; 秦丕文 | 8h |  |
| 70 | 1.1.3.3.3.3 | 后续工作 |  | 0.13d | 2020-09-09 09:02 | 2020-09-09 10:04 | 69 | 2006-06-14 08:00 | 2006-06-14 17:00 | 1d? | 0.74d |  | start no earlier than 2020-09-09 08:00 |  | 李明强 | 0.5h |  |
| 71 | 1.1.3.4 | **度量信息维护更新** |  | 69.12d | 2020-06-05 08:00 | 2020-09-09 18:00 |  |  |  |  |  |  |  | 科创日历 |  | 3h | 《项目度量数据库》 |
| 72 | 1.1.3.4.1 | 《项目度量库》数据更新 1（需求开发阶段结束） | manual | 0.14d | 2020-07-02 08:00 | 2020-07-02 09:07 |  |  |  |  |  |  | start no earlier than 2020-07-02 08:00 | 科创日历 | 高翔 | 0.5h |  |
| 73 | 1.1.3.4.2 | 《项目度量库》数据更新 2（系统设计阶段结束） | manual | 0.14d | 2020-07-22 08:00 | 2020-07-22 09:07 |  |  |  |  |  |  | start no earlier than 2020-07-22 08:00 | 科创日历 | 高翔 | 0.5h |  |
| 74 | 1.1.3.4.3 | 《项目度量库》数据更新 3（编码实现阶段结束） | manual | 0.14d | 2020-08-19 08:00 | 2020-08-19 09:07 |  |  |  |  |  |  | start no earlier than 2020-08-19 08:00 | 科创日历 | 高翔 | 0.5h |  |
| 75 | 1.1.3.4.4 | 《项目度量库》数据更新 4（产品集成阶段结束） | manual | 0.14d | 2020-08-21 08:00 | 2020-08-21 09:07 |  |  |  |  |  |  | start no earlier than 2020-08-21 08:00 | 科创日历 | 高翔 | 0.5h |  |
| 76 | 1.1.3.4.5 | 《项目度量库》数据更新 5（系统测试阶段结束） | manual | 0.14d | 2020-08-29 08:00 | 2020-08-29 09:07 |  |  |  |  |  |  | start no earlier than 2020-08-29 08:00 | 科创日历 | 高翔 | 0.5h |  |
| 77 | 1.1.3.4.6 | 《项目度量库》数据更新 6（产品交付阶段结束） | manual | 0.14d | 2020-09-09 08:00 | 2020-09-09 09:07 |  |  |  |  |  |  | start no earlier than 2020-09-09 08:00 | 科创日历 | 高翔 | 0.5h |  |
| 78 | 1.1.3.5 | **风险识别与跟踪** |  | 78.12d | 2020-06-05 08:00 | 2020-09-09 18:00 |  |  |  |  |  |  |  |  |  | 6.5h |  |
| 79 | 1.1.3.5.1 | 风险识别与跟踪 1 |  | 0.06d | 2020-06-15 08:00 | 2020-06-15 08:30 |  |  |  |  | 71.94d |  | start no earlier than 2020-06-15 08:00 |  | 高翔 | 0.5h |  |
| 80 | 1.1.3.5.2 | 风险识别与跟踪 2 |  | 0.06d | 2020-06-22 08:00 | 2020-06-22 08:30 |  |  |  |  | 66.94d |  | start no earlier than 2020-06-22 08:00 |  | 高翔 | 0.5h |  |
| 81 | 1.1.3.5.3 | 风险识别与跟踪 3 |  | 0.06d | 2020-06-29 08:00 | 2020-06-29 08:30 |  |  |  |  | 60.94d |  | start no earlier than 2020-06-29 08:00 |  | 高翔 | 0.5h |  |
| 82 | 1.1.3.5.4 | 风险识别与跟踪 4 |  | 0.06d | 2020-07-06 08:00 | 2020-07-06 08:30 |  |  |  |  | 55.94d |  | start no earlier than 2020-07-06 08:00 |  | 高翔 | 0.5h |  |
| 83 | 1.1.3.5.5 | 风险识别与跟踪 5 |  | 0.06d | 2020-07-13 08:00 | 2020-07-13 08:30 |  |  |  |  | 50.94d |  | start no earlier than 2020-07-13 08:00 |  | 高翔 | 0.5h |  |
| 84 | 1.1.3.5.6 | 风险识别与跟踪 6 |  | 0.06d | 2020-07-20 08:00 | 2020-07-20 08:30 |  |  |  |  | 44.94d |  | start no earlier than 2020-07-20 08:00 |  | 高翔 | 0.5h |  |
| 85 | 1.1.3.5.7 | 风险识别与跟踪 7 |  | 0.06d | 2020-07-27 08:00 | 2020-07-27 08:30 |  |  |  |  | 38.94d |  | start no earlier than 2020-07-27 08:00 |  | 高翔 | 0.5h |  |
| 86 | 1.1.3.5.8 | 风险识别与跟踪 8 |  | 0.06d | 2020-08-03 08:00 | 2020-08-03 08:30 |  |  |  |  | 32.94d |  | start no earlier than 2020-08-03 08:00 |  | 高翔 | 0.5h |  |
| 87 | 1.1.3.5.9 | 风险识别与跟踪 9 |  | 0.06d | 2020-08-10 08:00 | 2020-08-10 08:30 |  |  |  |  | 26.94d |  | start no earlier than 2020-08-10 08:00 |  | 高翔 | 0.5h |  |
| 88 | 1.1.3.5.10 | 风险识别与跟踪 10 |  | 0.06d | 2020-08-17 08:00 | 2020-08-17 08:30 |  |  |  |  | 20.94d |  | start no earlier than 2020-08-17 08:00 |  | 高翔 | 0.5h |  |
| 89 | 1.1.3.5.11 | 风险识别与跟踪 11 |  | 0.06d | 2020-08-24 08:00 | 2020-08-24 08:30 |  |  |  |  | 14.94d |  | start no earlier than 2020-08-24 08:00 |  | 高翔 | 0.5h |  |
| 90 | 1.1.3.5.12 | 风险识别与跟踪 12 |  | 0.06d | 2020-08-31 08:00 | 2020-08-31 08:30 |  |  |  |  | 8.94d |  | start no earlier than 2020-08-31 08:00 |  | 高翔 | 0.5h |  |
| 91 | 1.1.3.5.13 | 风险识别与跟踪 13 |  | 0.06d | 2020-09-07 08:00 | 2020-09-07 08:30 |  |  |  |  | 2.94d |  | start no earlier than 2020-09-07 08:00 |  | 高翔 | 0.5h |  |

| ID | WBS | Task | Type | Duration | Start | Finish | Predecessors | Baseline start | Baseline finish | Baseline duration | Total slack | Free slack | Constraint | Resources | Work | Baseline cost | Text1 |
| --- | --- | --- | --- | --- | --- | --- | --- | --- | --- | --- | --- | --- | --- | --- | --- | --- | --- |
| 92 | 1.1.4 | **项目结项** |  | 3.12d | 2020-09-07 08:00 | 2020-09-09 18:00 |  | 2006-06-14 08:00 | 2006-06-14 17:00 | 1d? |  |  |  |  | 34h |  |  |
| 93 | 1.1.4.1 | **结项准备** |  | 1.12d | 2020-09-07 08:00 | 2020-09-07 18:00 |  |  |  |  |  |  |  |  | 7h |  |  |
| 94 | 1.1.4.1.1 | 撰写《结项报告》 |  | 0.5d | 2020-09-07 08:00 | 2020-09-07 12:00 |  | 2006-06-14 08:00 | 2006-06-14 17:00 | 1d? | 2.5d |  | start no earlier than 2020-09-07 08:00 | 高翔 | 4h |  | 《项目结项总结报告》 |
| 95 | 1.1.4.1.2 | 撰写《QA总结报告》 |  | 0.38d | 2020-09-07 14:00 | 2020-09-07 18:00 |  | 2006-06-14 08:00 | 2006-06-14 17:00 | 1d? | 2d |  | finish no earlier than 2020-09-07 18:00 | 李明强 | 3h |  | 《QA总结报告》 |
| 96 | 1.1.4.2 | 结项申请，高级经理阅读申请材料 |  | 0.25d | 2020-09-07 08:00 | 2020-09-07 10:00 |  | 2006-06-14 08:00 | 2006-06-14 17:00 | 1d? | 2.75d |  | start no earlier than 2020-09-07 08:00 | 李刚 | 2h |  | 《项目结项申请单》 |
| 97 | 1.1.4.3 | **度量分析** |  | 1.12d | 2020-09-08 08:00 | 2020-09-08 18:00 |  |  |  |  |  |  |  |  | 3h |  |  |
| 98 | 1.1.4.3.1 | 项目结项阶段度量数据收集整理 |  | 0.25d | 2020-09-08 08:00 | 2020-09-08 10:00 |  |  |  |  | 1.75d |  | start no earlier than 2020-09-08 08:00 | 高翔 | 2h |  |  |
| 99 | 1.1.4.3.2 | 更新《项目度量数据库》 |  | 0.12d | 2020-09-08 08:00 | 2020-09-08 09:00 |  |  |  |  | 1.88d |  | start no earlier than 2020-09-08 08:00 | 高翔 | 1h |  | 《项目度量数据库》 |
| 100 | 1.1.4.4 | **召开项目结项会议** |  | 2.12d | 2020-09-08 08:00 | 2020-09-09 18:00 |  | 2006-06-14 08:00 | 2006-06-14 17:00 | 1d? |  |  |  |  | 20h |  |  |
| 101 | 1.1.4.4.1 | 项目结项会议 | manual | 0.25d | 2020-09-08 08:00 | 2020-09-08 10:00 |  |  |  |  |  |  |  | 高翔; 李明强; 张宝杰; 庄新胜; 邱辉; 徐长乐; 李刚; 秦丕文 | 16h |  | 《项目结项评审报告》《结项会议纪要》 |
| 102 | 1.1.4.4.2 | 总结经验教训 |  | 0.25d | 2020-09-09 08:00 | 2020-09-09 10:00 | 101 |  |  |  | 0.5d | 0d | start no earlier than 2020-09-09 08:00 | 高翔 | 2h |  | 《项目过程改进建议》 |
| 103 | 1.1.4.4.3 | 高级经理批准结项 | manual | 0.25d | 2020-09-09 08:00 | 2020-09-09 10:00 | 102 |  |  |  |  |  | start no earlier than 2020-09-09 08:00 | 李刚 | 2h |  | 高级经理审批后的《结项报告》 |
| 104 | 1.1.4.5 | **项目资产纳入组织过程资产库** |  | 0.5d | 2020-09-09 08:00 | 2020-09-09 12:00 |  | 2006-06-14 08:00 | 2006-06-14 17:00 | 1d? |  |  |  |  | 2h |  |  |
| 105 | 1.1.4.5.1 | EPG纳入组织资产库 | manual | 0.5d | 2020-09-09 08:00 | 2020-09-09 12:00 |  |  |  |  |  |  | start no earlier than 2020-09-09 08:00 | 李刚 | 2h |  | 组织资产库 |
| 106 | 1.2 | **工程过程** |  | 70.12d | 2020-06-12 08:00 | 2020-09-05 18:00 |  |  |  |  |  |  |  |  | 950.71h |  |  |
| 107 | 1.2.1 | **需求开发** |  | 16.12d | 2020-06-12 08:00 | 2020-07-02 18:00 |  | 2006-06-14 08:00 | 2006-06-15 17:00 | 2d? |  |  |  |  | 127h | 65 |  |
| 108 | 1.2.1.1 | **用户需求获取** |  | 6d | 2020-06-12 08:00 | 2020-06-19 17:00 |  | 2006-06-14 08:00 | 2006-06-14 17:00 | 1d? | 1d |  |  |  | 40h | 8 |  |
| 109 | 1.2.1.1.1 | 需求调查前准备 |  | 1d | 2020-06-12 08:00 | 2020-06-12 17:00 |  |  |  |  | 1d | 0d | start no earlier than 2020-06-12 08:00 | 高翔 [75%] | 6h |  | 《需求调研计划》 |
| 110 | 1.2.1.1.2 | 需求调研 |  | 3d | 2020-06-15 08:00 | 2020-06-17 17:00 | 109 |  |  |  | 1d | 0d |  | 高翔 [75%] | 18h |  | 《需求调查单》 |
| 111 | 1.2.1.1.3 | 撰写《用户需求说明书》 |  | 2d | 2020-06-18 08:00 | 2020-06-19 17:00 | 110 |  |  |  | 1d | 0d |  | 高翔 | 16h |  | 《用户需求说明书》 |
| 112 | 1.2.1.2 | **用户需求评审(正式评审)** |  | 2.12d | 2020-06-22 08:00 | 2020-06-23 18:00 | 111 | 2006-06-14 08:00 | 2006-06-14 17:00 | 1d? |  |  |  |  | 26h | 24 |  |
| 113 | 1.2.1.2.1 | 准备评审 |  | 0.25d | 2020-06-22 08:00 | 2020-06-22 10:00 |  | 2006-06-14 08:00 | 2006-06-14 17:00 | 1d? | 66.25d | 0d | start no earlier than 2020-06-22 08:00 | 李明强 | 2h | 8 | 《用户需求说明书评审准备表》 |
| 114 | 1.2.1.2.2 | 举行评审会议 |  | 0.5d | 2020-06-22 10:00 | 2020-06-22 15:00 | 113 | 2006-06-14 08:00 | 2006-06-14 17:00 | 1d? | 66.25d |  | start no earlier than 2020-04-08 08:00 | 高翔; 韩帅; 李明强; 张宝杰; 庄新胜; 邱辉; 徐长乐; 李刚; 秦丕文 | 18h | 8 | 《评审会议纪要》 |
| 115 | 1.2.1.2.3 | **修正、跟踪与审核** |  | 1.12d | 2020-06-23 08:00 | 2020-06-23 18:00 |  | 2006-06-14 08:00 | 2006-06-14 17:00 | 1d? |  |  |  |  | 6h |  |  |
| 116 | 1.2.1.2.3.1 | 修正工作产品 |  | 0.5d | 2020-06-23 13:00 | 2020-06-23 18:00 |  |  |  |  | 65d |  | finish no earlier than 2020-06-23 18:00 | 高翔 | 4h |  | 修正后的工作产品：《用户需求说明书》 |
| 117 | 1.2.1.2.3.2 | 修改后的工作产品的确认 |  | 0.25d | 2020-06-23 08:00 | 2020-06-23 10:00 |  |  |  |  | 65.75d |  | start no earlier than 2020-06-23 08:00 | 李明强 | 2h |  | 《用户需求说明书评审报告》 |
| 118 | 1.2.1.3 | 新建《需求跟踪矩阵》 |  | 0.25d | 2020-06-23 08:00 | 2020-06-23 10:00 |  |  |  |  | 64.25d | 0.75d | start no earlier than 2020-06-23 08:00 | 高翔 | 2h |  | 《需求跟踪矩阵》 |

| ID | WBS | Task | Type | Duration | Start | Finish | Predecessors | Baseline start | Baseline finish | Baseline duration | Total slack | Free slack | Constraint | Resources | Work | Baseline cost | Text1 |
| --- | --- | --- | --- | --- | --- | --- | --- | --- | --- | --- | --- | --- | --- | --- | --- | --- | --- |
| 119 | 1.2.1.4 | **系统需求定义** |  | 6.12d | 2020-06-24 08:00 | 2020-06-30 18:00 | 118 | 2006-06-14 08:00 | 2006-06-14 14:00 | 5h |  |  |  |  | 32h | 5 |  |
| 120 | 1.2.1.4.1 | 制作业务模型、数据字典（可选） |  | 1d | 2020-06-24 08:00 | 2020-06-24 17:00 |  |  |  |  | 64d |  | start no earlier than 2020-06-24 08:00 | 高翔 | 8h |  | 业务模型、数据字典 |
| 121 | 1.2.1.4.2 | 撰写《产品需求规格说明书》 |  | 1.5d | 2020-06-28 08:00 | 2020-06-29 12:00 |  |  |  |  | 60.5d |  | start no earlier than 2020-06-28 08:00 | 高翔 | 12h |  | 《产品需求规格说明书》 |
| 122 | 1.2.1.4.3 | 制作系统开发原型Demo |  | 1.5d | 2020-06-29 08:00 | 2020-06-30 12:00 | 112 |  |  |  | 59.5d |  | start no earlier than 2020-06-29 08:00 | 高翔 | 12h |  |  |
| 123 | 1.2.1.5 | **产品需求评审(正式评审)** |  | 2d | 2020-07-01 08:00 | 2020-07-02 18:00 |  |  |  |  | 0d |  |  |  | 26h |  |  |
| 124 | 1.2.1.5.1 | 准备评审 |  | 0.25d | 2020-07-01 08:00 | 2020-07-01 10:00 |  | 2006-06-14 08:00 | 2006-06-14 17:00 | 1d? | 3.75d |  | start no earlier than 2020-07-01 08:00 | 李明强 | 2h | 8 | 《评审准备表》 |
| 125 | 1.2.1.5.2 | 举行评审会议 |  | 0.5d | 2020-07-01 08:00 | 2020-07-01 12:00 |  | 2006-06-14 08:00 | 2006-06-14 17:00 | 1d? | 3.5d | 0d | start no earlier than 2020-07-01 08:00 | 高翔; 韩帅; 李明强; 张宝杰; 庄新胜; 邱辉; 徐长乐; 李刚; 秦丕文 | 18h | 8 | 《评审会议记录》 |
| 126 | 1.2.1.5.3 | **修正、跟踪与审核** |  | 2.12d | 2020-07-01 08:00 | 2020-07-02 18:00 |  | 2006-06-14 08:00 | 2006-06-14 17:00 | 1d? |  |  |  |  | 6h |  |  |
| 127 | 1.2.1.5.3.1 | 修正工作产品 | manual | 0.5d | 2020-07-01 08:00 | 2020-07-01 12:00 | 125 |  |  |  |  |  | start no earlier than 2020-07-01 08:00 | 高翔 | 4h |  | 修正后的工作产品：《产品需求规格说明书》 |
| 128 | 1.2.1.5.3.2 | 修改后的工作产品的确认 | manual | 0.25d | 2020-07-02 08:00 | 2020-07-02 10:00 | 125 |  |  |  |  |  | start no earlier than 2020-07-02 08:00 | 李明强 | 2h |  | 《产品需求规格说明书评审报告》 |
| 129 | 1.2.1.6 | 更新《需求跟踪矩阵》 |  | 0.12d | 2020-07-02 08:00 | 2020-07-02 09:00 |  |  |  |  | -0.12d | 0d | start no earlier than 2020-07-02 08:00 | 高翔 | 1h |  | 《需求跟踪矩阵》《项目变更申请表》《项目变更记录表》 |
| 130 | 1.2.2 | **系统设计** |  | 14.12d | 2020-07-06 08:00 | 2020-07-22 18:00 | 107 |  |  |  |  |  |  |  | 166h |  |  |
| 131 | 1.2.2.1 | 撰写《技术解决方案》 |  | 0.5d | 2020-07-06 08:00 | 2020-07-06 12:00 |  |  |  |  | 55d | 0d | start no earlier than 2020-07-06 08:00 | 秦丕文 | 4h |  | 《技术解决方案》 |
| 132 | 1.2.2.2 | 对于多方案进行决策(可选) |  | 0.5d | 2020-07-06 13:00 | 2020-07-06 17:00 | 131 |  |  |  | 55d |  | finish no earlier than 2020-04-28 18:00 | 庄新胜; 邱辉; 秦丕文 | 12h |  |  |
| 133 | 1.2.2.3 | **概要设计与数据库设计** |  | 4.12d | 2020-07-07 08:00 | 2020-07-10 18:00 |  | 2006-06-14 08:00 | 2006-06-14 17:00 | 1d? |  |  |  |  | 34h |  |  |
| 134 | 1.2.2.3.1 | 撰写概要设计文档与数据库设计文档 |  | 3.75d | 2020-07-07 08:00 | 2020-07-10 15:00 |  |  |  |  | 51.25d |  | start no earlier than 2020-07-07 08:00 | 秦丕文 | 30h |  | 《概要设计说明书》、《数据库设计说明书》 |
| 135 | 1.2.2.3.2 | 购买复用分析 |  | 0.25d | 2020-07-10 08:00 | 2020-07-10 10:00 |  |  |  |  | 22.76d | 0.75d | start no earlier than 2020-07-10 08:00 | 高翔; 秦丕文 | 4h |  | 《概要设计说明书》、《数据库设计说明书》 |
| 136 | 1.2.2.4 | **概要设计数据库设计评审(正式评审)** |  | 1.75d | 2020-07-13 08:00 | 2020-07-14 15:00 | 135 | 2006-06-14 08:00 | 2006-06-14 17:00 | 1d? |  |  |  |  | 32h |  |  |
| 137 | 1.2.2.4.1 | 准备评审 |  | 0.25d | 2020-07-13 08:00 | 2020-07-13 10:00 |  | 2006-06-14 08:00 | 2006-06-14 17:00 | 1d? | 22.01d | 0d | start no earlier than 2020-07-13 08:00 | 李明强 | 2h | 8 | 《评审准备表》 |
| 138 | 1.2.2.4.2 | 举行评审会议 |  | 0.5d | 2020-07-13 10:00 | 2020-07-13 15:00 | 137 | 2006-06-14 08:00 | 2006-06-14 17:00 | 1d? | 22.01d | 0d | finish no earlier than 2020-05-03 18:00 | 高翔; 李明强; 张宝杰; 庄新胜; 邱辉; 徐长乐; 李刚; 秦丕文 | 24h | 8 | 《设计评审会议纪要》 |
| 139 | 1.2.2.4.3 | **修正、跟踪与审核** |  | 0.75d | 2020-07-13 15:00 | 2020-07-14 12:00 | 138 | 2006-06-14 08:00 | 2006-06-14 17:00 | 1d? | 22.01d |  |  |  | 6h |  |  |
| 140 | 1.2.2.4.3.1 | 修正工作产品 |  | 0.5d | 2020-07-13 15:00 | 2020-07-14 10:00 | 138 |  |  |  | 22.01d | 0d | start no earlier than 2020-05-13 08:00 | 秦丕文 | 4h |  | 修正后的工作产品：《概要设计说明书》、《数据库设计说明书》 |
| 141 | 1.2.2.4.3.2 | 修改后的工作产品的确认 |  | 0.25d | 2020-07-14 10:00 | 2020-07-14 12:00 | 140 |  |  |  | 22.01d |  | finish no earlier than 2020-05-04 18:00 | 李明强 | 2h |  | 《设计说明书评审报告》 |
| 142 | 1.2.2.5 | **详细设计** |  | 7.12d | 2020-07-14 08:00 | 2020-07-21 18:00 |  | 2006-06-14 08:00 | 2006-06-14 17:00 | 1d? |  |  |  |  | 52h |  | 《详细设计说明书》 |
| 143 | 1.2.2.5.1 | 自助办证模块设计 |  | 1.5d | 2020-07-14 08:00 | 2020-07-15 12:00 |  |  |  |  | 48.5d |  | start no earlier than 2020-07-14 08:00 | 秦丕文 | 12h |  |  |
| 144 | 1.2.2.5.2 | 自助借还模块设计 |  | 2.5d | 2020-07-15 13:00 | 2020-07-17 18:00 | 136 |  |  |  | 46d |  | finish no earlier than 2020-07-17 18:00 | 秦丕文 | 20h |  |  |
| 145 | 1.2.2.5.3 | 检索查询模块设计 |  | 2.5d | 2020-07-18 08:00 | 2020-07-21 12:00 |  |  |  |  | 43.5d |  | start no earlier than 2020-07-18 08:00 | 秦丕文 | 20h |  |  |

| ID | WBS | Task | Type | Duration | Start | Finish | Predecessors | Baseline start | Baseline finish | Baseline duration | Total slack | Free slack | Constraint | Resources | Work | Baseline cost | Text1 |
| --- | --- | --- | --- | --- | --- | --- | --- | --- | --- | --- | --- | --- | --- | --- | --- | --- | --- |
| 146 | 1.2.2.6 | **详细设计评审(正式评审)** |  | 2d | 2020-07-21 08:00 | 2020-07-22 18:00 |  | 2006-06-14 08:00 | 2006-06-14 17:00 | 1d? | 0d |  |  |  | 32h |  |  |
| 147 | 1.2.2.6.1 | 准备评审 | manual | 0.25d | 2020-07-21 08:00 | 2020-07-21 10:00 |  | 2006-06-14 08:00 | 2006-06-14 17:00 | 1d? |  |  |  | 秦丕文 | 2h | 8 | 《评审准备表》 |
| 148 | 1.2.2.6.2 | 举行评审会议 | manual | 0.5d | 2020-07-21 08:00 | 2020-07-21 12:00 | 147 | 2006-06-14 08:00 | 2006-06-14 17:00 | 1d? |  |  |  | 高翔; 李明强; 张宝杰; 庄新胜; 邱辉; 徐长乐; 李刚; 秦丕文 | 24h | 8 | 《会议纪要》 |
| 149 | 1.2.2.6.3 | **修正、跟踪与审核** |  | 1.12d | 2020-07-22 08:00 | 2020-07-22 18:00 | 148 | 2006-06-14 08:00 | 2006-06-14 17:00 | 1d? |  |  |  |  | 6h |  |  |
| 150 | 1.2.2.6.3.1 | 修正工作产品 | manual | 0.5d | 2020-07-22 08:00 | 2020-07-22 12:00 | 148 |  |  |  |  |  |  | 秦丕文 | 4h |  | 修正后的工作产品：《详细设计说明书》 |
| 151 | 1.2.2.6.3.2 | 修改后的工作产品的确认 | manual | 0.25d | 2020-07-22 08:00 | 2020-07-22 10:00 |  |  |  |  |  |  | start no earlier than 2020-07-22 08:00 | 李明强 | 2h |  | 《详细设计评审报告》 |
| 152 | 1.2.3 | **编码实现** |  | 25.12d | 2020-07-22 08:00 | 2020-08-19 18:00 | 130 | 2006-06-14 08:00 | 2006-06-14 17:00 | 1d? |  |  |  |  | 487h |  |  |
| 153 | 1.2.3.1 | 制定编码计划 |  | 0.5d | 2020-07-22 08:00 | 2020-07-22 12:00 |  |  |  |  | 40.5d | 0.5d | start no earlier than 2020-07-22 08:00 | 徐长乐 | 4h |  |  |
| 154 | 1.2.3.2 | 构建数据库 |  | 2d | 2020-07-23 08:00 | 2020-07-24 17:00 | 153 |  |  |  | 40d |  | start no earlier than 2020-07-23 08:00 | 邱辉; 徐长乐 | 32h |  | 产品数据库 |
| 155 | 1.2.3.3 | **编码实现模块功能** |  | 16d | 2020-07-27 08:00 | 2020-08-13 17:00 |  |  |  |  | 11.51d |  |  |  | 384h |  | 程序源代码 |
| 156 | 1.2.3.3.1 | 自助办证模块 |  | 12d | 2020-07-27 08:00 | 2020-08-08 17:00 |  |  |  |  | 15.51d |  | start no earlier than 2020-07-27 08:00 | 邱辉 | 96h |  |  |
| 157 | 1.2.3.3.2 | 检索查询模块 |  | 16d | 2020-07-27 08:00 | 2020-08-13 17:00 |  |  |  |  | 11.51d |  | start no earlier than 2020-07-27 08:00 | 庄新胜 | 128h |  |  |
| 158 | 1.2.3.3.3 | 自助借还模块 |  | 16d | 2020-07-27 08:00 | 2020-08-13 17:00 |  |  |  |  | 11.51d |  | start no earlier than 2020-07-27 08:00 | 邱辉 [25%]; 徐长乐 | 160h |  |  |
| 159 | 1.2.3.4 | **代码走查** |  | 3.12d | 2020-08-14 08:00 | 2020-08-17 18:00 |  |  |  |  |  |  |  |  | 48h |  | bug记录 代码走查检查单 |
| 160 | 1.2.3.4.1 | 自助办证模块 |  | 1d | 2020-08-14 08:00 | 2020-08-14 17:00 |  |  |  |  | 22d |  | start no earlier than 2020-08-14 08:00 | 高翔; 庄新胜; 邱辉; 徐长乐 | 16h |  |  |
| 161 | 1.2.3.4.2 | 检索查询模块 |  | 1d | 2020-08-15 08:00 | 2020-08-15 17:00 |  |  |  |  | 21d |  | start no earlier than 2020-08-15 08:00 | 高翔; 庄新胜; 邱辉; 徐长乐 | 16h |  |  |
| 162 | 1.2.3.4.3 | 自助借还模块 |  | 1d | 2020-08-17 08:00 | 2020-08-17 17:00 |  |  |  |  | 20d |  | start no earlier than 2020-08-17 08:00 | 高翔; 庄新胜; 邱辉; 徐长乐 | 16h |  |  |
| 163 | 1.2.3.5 | **编写支持文档** |  | 2.12d | 2020-08-18 08:00 | 2020-08-19 18:00 | 159 |  |  |  |  |  |  |  | 12h |  |  |
| 164 | 1.2.3.5.1 | 编写《用户操作手册》 |  | 1.5d | 2020-08-18 08:00 | 2020-08-19 12:00 |  |  |  |  | 18.5d |  | start no earlier than 2020-08-18 08:00 | 庄新胜 | 12h |  | 《用户手册》《维护手册》 |
| 165 | 1.2.3.5.2 | 评审支持文档(非正式评审) |  | 0.19d | 2020-08-19 08:00 | 2020-08-19 09:30 |  |  |  |  | 18.81d |  | start no earlier than 2020-08-19 08:00 | 高翔 [66.7%]; 李明强 [66.7%]; 张宝杰 [66.7%]; 庄新胜 [66.7%]; 邱辉 [66.7%]; 徐长乐 [66.7%]; 秦丕文 [66.7%] | 7h |  | 《评审准备表》、《评审报告》、《会议纪要》 |
| 166 | 1.2.4 | **产品集成** |  | 2.12d | 2020-08-20 08:00 | 2020-08-21 18:00 | 159 |  |  |  |  |  |  |  | 36h |  |  |
| 167 | 1.2.4.1 | 制定《产品集成计划》 |  | 0.5d | 2020-08-20 08:00 | 2020-08-20 12:00 |  |  |  |  | 17.29d | 0d | start no earlier than 2020-08-20 08:00 | 高翔 | 4h |  |  |
| 168 | 1.2.4.2 | 评审《产品集成计划》 |  | 0.21d | 2020-08-20 13:00 | 2020-08-20 14:42 | 167 |  |  |  | 17.29d |  | start no earlier than 2020-05-29 08:00 | 高翔 [67%]; 李明强 [67%]; 张宝杰 [67%]; 庄新胜 [67%]; 邱辉 [67%]; 徐长乐 [67%]; 秦丕文 [67%] | 8h |  | 评审报告、会议纪要 |
| 169 | 1.2.4.3 | 审查接口的兼容性 |  | 0.5d | 2020-08-20 08:00 | 2020-08-20 12:00 |  |  |  |  | 17.5d |  | start no earlier than 2020-08-20 08:00 | 邱辉; 徐长乐 | 8h |  | 《接口关系表》 |
| 170 | 1.2.4.4 | 组装产品组件 |  | 1d | 2020-08-21 08:00 | 2020-08-21 17:00 |  |  |  |  | 16d |  | start no earlier than 2020-08-21 08:00 | 邱辉; 徐长乐 | 16h |  | 《接口关系表》 |

| ID | WBS | Task | Type | Duration | Start | Finish | Predecessors | Baseline start | Baseline finish | Baseline duration | Total slack | Free slack | Constraint | Resources | Work | Baseline cost | Text1 |
| --- | --- | --- | --- | --- | --- | --- | --- | --- | --- | --- | --- | --- | --- | --- | --- | --- | --- |
| 171 | 1.2.5 | **系统测试** |  | 7.12d | 2020-08-22 08:00 | 2020-08-29 18:00 |  | 2006-06-14 08:00 | 2006-06-14 17:00 | 1d? |  |  |  |  | 82.71h |  |  |
| 172 | 1.2.5.1 | 制定《系统测试计划》 |  | 0.5d | 2020-08-22 08:00 | 2020-08-22 12:00 |  |  |  |  | 15.34d | 0d | start no earlier than 2020-08-22 08:00 | 徐长乐 | 4h |  | 《系统测试计划》 |
| 173 | 1.2.5.2 | 评审《系统测试计划》 |  | 0.16d | 2020-08-22 13:00 | 2020-08-22 14:17 | 172 |  |  |  | 15.34d |  | finish no earlier than 2020-07-09 18:00 | 高翔 [77.9%]; 李明强 [77.9%]; 张宝杰 [77.9%]; 庄新胜 [77.9%]; 邱辉 [77.9%]; 徐长乐 [77.9%]; 秦丕文 [77.9%] | 7h |  | 评审报告、会议纪要 |
| 174 | 1.2.5.3 | 编写《系统测试用例》 | manual | 1d | 2020-08-24 08:00 | 2020-08-24 17:00 |  |  |  |  |  |  | start no earlier than 2020-08-24 08:00 | 徐长乐 | 8h |  | 《系统测试用例》 |
| 175 | 1.2.5.4 | **评审《系统测试用例》** |  | 2.12d | 2020-08-25 08:00 | 2020-08-26 18:00 | 174 |  |  |  |  |  |  |  | 24h |  |  |
| 176 | 1.2.5.4.1 | 评审准备 |  | 0.25d | 2020-08-25 08:00 | 2020-08-25 10:00 | 174 | 2006-06-14 08:00 | 2006-06-14 17:00 | 1d? | 12.83d | 0d | start no earlier than 2020-08-25 08:00 | 徐长乐 | 2h | 8 | 《评审准备表》 |
| 177 | 1.2.5.4.2 | 举行评审会议 |  | 0.42d | 2020-08-25 10:00 | 2020-08-25 14:22 | 176 |  |  |  | 12.83d | 0d | finish no earlier than 2020-07-13 18:00 | 高翔 [59.3%]; 李明强 [59.3%]; 张宝杰 [59.3%]; 庄新胜 [59.3%]; 邱辉 [59.3%]; 徐长乐 [59.3%]; 李刚 [59.3%]; 秦丕文 [59.3%] | 16h |  | 《会议记录》 |
| 178 | 1.2.5.4.3 | **修正、跟踪与审核** |  | 2.12d | 2020-08-25 08:00 | 2020-08-26 18:00 | 177 | 2006-06-14 08:00 | 2006-06-14 17:00 | 1d? |  |  |  |  | 6h |  |  |
| 179 | 1.2.5.4.3.1 | 修正工作产品 |  | 0.5d | 2020-08-25 08:00 | 2020-08-25 12:00 |  |  |  |  | 13.5d |  | start no earlier than 2020-08-25 08:00 | 徐长乐 | 4h |  | 修正后的工作产品：《系统测试用例》 |
| 180 | 1.2.5.4.3.2 | 修改后的工作产品的确认 |  | 0.25d | 2020-08-26 08:00 | 2020-08-26 10:00 |  |  |  |  | 12.75d |  | start no earlier than 2020-08-26 08:00 | 李明强 | 2h |  | 《系统测试用例评审报告》 |
| 181 | 1.2.5.5 | **执行系统测试** |  | 4.12d | 2020-08-26 08:00 | 2020-08-29 18:00 | 152 |  |  |  |  |  |  |  | 39.71h |  |  |
| 182 | 1.2.5.5.1 | 搭建系统测试环境 |  | 0.5d | 2020-08-26 08:00 | 2020-08-26 12:00 |  |  |  |  | 1.51d | 0.5d | start no earlier than 2020-08-26 08:00 | 徐长乐 | 4h |  |  |
| 183 | 1.2.5.5.2 | 执行系统测试用例 |  | 1.5d | 2020-08-27 08:00 | 2020-08-28 12:00 | 182 |  |  |  | 10.5d |  | start no earlier than 2020-08-27 08:00 | 徐长乐 | 12h |  |  |
| 184 | 1.2.5.5.3 | 记录并跟踪缺陷 |  | 0.5d | 2020-08-28 08:00 | 2020-08-28 12:00 | 182 |  |  |  | 10.5d |  | start no earlier than 2020-08-28 08:00 | 徐长乐 [50%] | 2h |  | 《系统测试用例》、《BUG记录单》 |
| 185 | 1.2.5.5.4 | 修改缺陷 |  | 1.99d | 2020-08-27 08:00 | 2020-08-28 16:56 | 182 |  |  |  | 1.01d | 0.01d | start no earlier than 2020-08-27 08:00 | 庄新胜 [26%]; 邱辉 [26%]; 徐长乐 [34%] | 13.71h |  | 代码 |
| 186 | 1.2.5.5.5 | 撰写《系统测试报告》 |  | 1d | 2020-08-29 08:00 | 2020-08-29 17:00 | 185 |  |  |  | 1d | 0d | start no earlier than 2020-08-29 08:00 | 徐长乐 | 8h |  | 《系统测试报告》 |
| 187 | 1.2.6 | **产品交付** |  | 6.12d | 2020-08-31 08:00 | 2020-09-05 18:00 | 186 | 2006-06-14 08:00 | 2006-06-14 17:00 | 1d? |  |  |  |  | 52h |  |  |
| 188 | 1.2.6.1 | 产品打包交付 |  | 0.5d | 2020-08-31 08:00 | 2020-08-31 12:00 |  |  |  |  | 8.5d |  | start no earlier than 2020-08-31 08:00 | 高翔 | 4h |  | 《产品打包清单》 |
| 189 | 1.2.6.2 | 用户使用培训 |  | 0.5d | 2020-08-31 08:00 | 2020-08-31 12:00 |  |  |  |  | 8.5d |  | start no earlier than 2020-08-31 08:00 | 高翔 | 4h |  |  |
| 190 | 1.2.6.3 | **用户验收测试** |  | 5.12d | 2020-09-01 08:00 | 2020-09-05 18:00 |  |  |  |  |  |  |  |  | 42h |  |  |
| 191 | 1.2.6.3.1 | 编写验收测试计划 |  | 0.5d | 2020-09-01 08:00 | 2020-09-01 12:00 |  |  |  |  | 7.5d |  | start no earlier than 2020-09-01 08:00 | 徐长乐 | 4h |  |  |
| 192 | 1.2.6.3.2 | 编写验收测试用例 | manual | 2d | 2020-09-02 08:00 | 2020-09-03 17:00 |  |  |  |  |  |  | start no earlier than 2020-09-02 08:00 | 徐长乐 | 16h |  |  |
| 193 | 1.2.6.3.3 | 执行验收测试 |  | 1d | 2020-09-04 08:00 | 2020-09-04 17:00 | 192 |  |  |  | 3.12d | 0d | start no earlier than 2020-09-04 08:00 | 韩帅; 徐长乐 | 16h |  |  |
| 194 | 1.2.6.3.4 | 编写验收测试报告 |  | 0.75d | 2020-09-05 08:00 | 2020-09-05 15:00 | 193 |  |  |  | 3.12d | 0d | finish no earlier than 2020-07-27 18:00 | 高翔 | 6h |  |  |
| 195 | 1.2.6.4 | 编写《客户验收报告》,双方签字确认 |  | 0.12d | 2020-09-05 15:00 | 2020-09-05 16:00 | 194 |  |  |  | 3.12d |  | finish no earlier than 2020-07-27 18:00 | 高翔; 韩帅 | 2h |  | 《产品交接验收单》、《客户验收报告》 |

| ID | WBS | Task | Duration | Start | Finish | Complete | Remaining | Actual start | Baseline start | Baseline duration | Total slack | Constraint | Resources | Work | Actual work |
| --- | --- | --- | --- | --- | --- | --- | --- | --- | --- | --- | --- | --- | --- | --- | --- |
| 196 | 1.3 | **支持过程** | 78d | 2020-06-05 08:00 A | 2020-09-09 18:00 |  | 77.64d |  |  |  | 0d |  |  | 87.9h | 8.96h |
| 197 | 1.3.1 | **质量保证** | 78.12d | 2020-06-05 08:00 | 2020-09-09 18:00 |  |  |  |  |  |  |  |  | 49.44h |  |
| 198 | 1.3.1.1 | **过程和产品检查** | 78.12d | 2020-06-05 08:00 | 2020-09-09 18:00 |  |  |  | 2016-10-12 08:00 | 91d |  |  |  | 37.44h |  |
| 199 | 1.3.1.1.1 | 过程和产品检查 | 78d | 2020-06-05 08:00 | 2020-09-09 18:00 |  |  |  |  |  | 0d | finish no earlier than 2020-09-09 18:00 | 李明强 [2%] | 12.48h |  |
| 200 | 1.3.1.1.2 | 不符合项目报告编制 | 78d | 2020-06-05 08:00 | 2020-09-09 18:00 |  |  |  |  |  | 0d | finish no earlier than 2020-09-09 18:00 | 李明强 [2%] | 12.48h |  |
| 201 | 1.3.1.1.3 | 不一致问题跟踪 | 78d | 2020-06-05 08:00 | 2020-09-09 18:00 |  |  |  |  |  | 0d | finish no earlier than 2020-09-09 18:00 | 李明强 [2%] | 12.48h |  |
| 202 | 1.3.1.2 | **QA里程碑报告编制** | 43.12d | 2020-07-22 08:00 | 2020-09-09 18:00 |  |  |  |  |  |  |  |  | 12h |  |
| 203 | 1.3.1.2.1 | 计划、需求与设计里程碑评审 | 0.5d | 2020-07-22 08:00 | 2020-07-22 12:00 |  |  |  |  |  | 42.5d | start no earlier than 2020-07-22 08:00 | 李明强 | 4h |  |
| 204 | 1.3.1.2.2 | 编码与集成里程碑评审 | 0.5d | 2020-08-21 08:00 | 2020-08-21 12:00 |  |  |  |  |  | 16.5d | start no earlier than 2020-08-21 08:00 | 李明强 | 4h |  |
| 205 | 1.3.1.2.3 | 测试、实施与结项里程碑评审 | 0.5d | 2020-09-09 08:00 | 2020-09-09 12:00 |  |  |  |  |  | 0.5d | start no earlier than 2020-09-09 08:00 | 李明强 | 4h |  |
| 206 | 1.3.2 | **配置管理** | 75.12d | 2020-06-10 08:00 | 2020-09-09 18:00 | 23% | 57.62d | 2020-06-05 08:00 |  |  |  |  |  | 38.46h | 8.96h |
| 207 | 1.3.2.1 | 创建配置库、分配人员权限 | 0.25d | 2020-06-10 08:00 A | 2020-06-10 10:00 A | 100% |  |  |  |  |  | finish no earlier than 2020-03-12 18:00 | 张宝杰 | 2h | 2h |
| 208 | 1.3.2.2 | **需求结束后基线** | 1d | 2020-07-03 08:00 | 2020-07-03 18:00 |  |  |  |  |  | 56d |  |  | 4.5h |  |
| 209 | 1.3.2.2.1 | 基线创建申请 | 0.06d | 2020-07-03 08:00 | 2020-07-03 08:30 |  |  |  |  |  | 56.94d | start no earlier than 2020-07-03 08:00 | 张宝杰 | 0.5h |  |
| 210 | 1.3.2.2.2 | 功能和物理审计 | 0.25d | 2020-07-03 15:00 | 2020-07-03 18:00 |  |  |  |  |  | 56d | finish no earlier than 2020-07-03 18:00 | 张宝杰 | 2h |  |
| 211 | 1.3.2.2.3 | 基线域中创建基线 | 0.12d | 2020-07-03 08:00 | 2020-07-03 09:00 |  |  |  |  |  | 56.88d | start no earlier than 2020-07-03 08:00 | 张宝杰 | 1h |  |
| 212 | 1.3.2.2.4 | 基线发布 | 0.12d | 2020-07-03 08:00 | 2020-07-03 09:00 |  |  |  |  |  | 56.88d | start no earlier than 2020-07-03 08:00 | 张宝杰 | 1h |  |
| 213 | 1.3.2.3 | **设计结束后基线** | 1d | 2020-07-23 08:00 | 2020-07-23 17:00 |  |  |  |  |  |  |  |  | 4.5h |  |
| 214 | 1.3.2.3.1 | 基线创建申请 | 0.06d | 2020-07-23 08:00 | 2020-07-23 08:30 |  |  |  |  |  | 41.94d | start no earlier than 2020-07-23 08:00 | 张宝杰 | 0.5h |  |
| 215 | 1.3.2.3.2 | 功能和物理审计 | 0.25d | 2020-07-23 08:00 | 2020-07-23 10:00 |  |  |  |  |  | 41.75d | start no earlier than 2020-07-23 08:00 | 张宝杰 | 2h |  |
| 216 | 1.3.2.3.3 | 基线域中创建基线 | 0.12d | 2020-07-23 08:00 | 2020-07-23 09:00 |  |  |  |  |  | 41.88d | start no earlier than 2020-07-23 08:00 | 张宝杰 | 1h |  |
| 217 | 1.3.2.3.4 | 基线发布 | 0.12d | 2020-07-23 08:00 | 2020-07-23 09:00 |  |  |  |  |  | 41.88d | start no earlier than 2020-07-23 08:00 | 张宝杰 | 1h |  |
| 218 | 1.3.2.4 | **编码结束后基线** | 1.12d | 2020-08-20 08:00 | 2020-08-21 09:00 |  |  |  |  |  |  |  |  | 4.5h |  |
| 219 | 1.3.2.4.1 | 基线创建申请 | 0.06d | 2020-08-20 08:00 | 2020-08-20 08:30 |  |  |  |  |  | 17.94d | start no earlier than 2020-08-20 08:00 | 张宝杰 | 0.5h |  |
| 220 | 1.3.2.4.2 | 功能和物理审计 | 0.25d | 2020-08-20 08:00 | 2020-08-20 10:00 |  |  |  |  |  | 17.75d | start no earlier than 2020-08-20 08:00 | 张宝杰 | 2h |  |
| 221 | 1.3.2.4.3 | 基线域中创建基线 | 0.12d | 2020-08-20 08:00 | 2020-08-20 09:00 |  |  |  |  |  | 17.88d | start no earlier than 2020-08-20 08:00 | 张宝杰 | 1h |  |
| 222 | 1.3.2.4.4 | 基线发布 | 0.12d | 2020-08-20 08:00 | 2020-08-20 09:00 |  |  |  |  |  | 17.88d | start no earlier than 2020-08-20 08:00 | 张宝杰 | 1h |  |

| ID | WBS | Task | Duration | Start | Finish | Complete | Remaining | Total slack | Constraint | Resources | Work | Actual work |
| --- | --- | --- | --- | --- | --- | --- | --- | --- | --- | --- | --- | --- |
| 223 | 1.3.2.5 | **系统测试结束后基线** | 1d | 2020-08-31 08:00 A | 2020-08-31 18:00 | 50% | 0.5d | 8d |  |  | 4.98h | 2.48h |
| 224 | 1.3.2.5.1 | 基线创建申请 | 0.12d | 2020-08-31 08:00 A | 2020-08-31 08:58 | 49% | 0.06d | 8.88d | finish no earlier than 2020-07-20 18:00 | 张宝杰 | 0.98h | 0.48h |
| 225 | 1.3.2.5.2 | 功能和物理审计 | 0.25d | 2020-08-31 15:00 | 2020-08-31 18:00 |  |  | 8d | finish no earlier than 2020-08-31 18:00 | 张宝杰 | 2h |  |
| 226 | 1.3.2.5.3 | 基线域中创建基线 | 0.12d | 2020-08-31 08:00 A | 2020-08-31 09:00 A | 100% |  |  | finish no earlier than 2020-07-20 18:00 | 张宝杰 | 1h | 1h |
| 227 | 1.3.2.5.4 | 基线发布 | 0.12d | 2020-08-31 08:00 A | 2020-08-31 09:00 A | 100% |  |  | finish no earlier than 2020-07-20 18:00 | 张宝杰 | 1h | 1h |
| 228 | 1.3.2.6 | **产品交付基线** | 1d | 2020-09-07 08:00 A | 2020-09-07 17:00 | 90% | 0.1d |  |  |  | 4.98h | 4.48h |
| 229 | 1.3.2.6.1 | 基线创建申请 | 0.12d | 2020-09-07 08:00 A | 2020-09-07 08:58 | 49% | 0.06d | 2.88d | finish no earlier than 2020-07-27 18:00 | 张宝杰 | 0.98h | 0.48h |
| 230 | 1.3.2.6.2 | 功能和物理审计 | 0.25d | 2020-09-07 08:00 A | 2020-09-07 10:00 A | 100% |  |  | finish no earlier than 2020-07-27 18:00 | 张宝杰 | 2h | 2h |
| 231 | 1.3.2.6.3 | 基线域中创建基线 | 0.12d | 2020-09-07 08:00 A | 2020-09-07 09:00 A | 100% |  |  | finish no earlier than 2020-07-27 18:00 | 张宝杰 | 1h | 1h |
| 232 | 1.3.2.6.4 | 基线发布 | 0.12d | 2020-09-07 08:00 A | 2020-09-07 09:00 A | 100% |  |  | finish no earlier than 2020-07-27 18:00 | 张宝杰 | 1h | 1h |
| 233 | 1.3.2.7 | **配置库备份和配置项状态跟踪** | 78.12d | 2020-06-05 08:00 | 2020-09-09 18:00 |  |  |  |  |  | 13h |  |
| 234 | 1.3.2.7.1 | 配置库备份和配置项状态跟踪 1 | 0.12d | 2020-06-15 08:00 | 2020-06-15 09:00 |  |  | 71.88d | start no earlier than 2020-06-15 08:00 | 张宝杰 | 1h |  |
| 235 | 1.3.2.7.2 | 配置库备份和配置项状态跟踪 2 | 0.12d | 2020-06-22 08:00 | 2020-06-22 09:00 |  |  | 66.88d | start no earlier than 2020-06-22 08:00 | 张宝杰 | 1h |  |
| 236 | 1.3.2.7.3 | 配置库备份和配置项状态跟踪 3 | 0.12d | 2020-06-29 08:00 | 2020-06-29 09:00 |  |  | 60.88d | start no earlier than 2020-06-29 08:00 | 张宝杰 | 1h |  |
| 237 | 1.3.2.7.4 | 配置库备份和配置项状态跟踪 4 | 0.12d | 2020-07-06 08:00 | 2020-07-06 09:00 |  |  | 55.88d | start no earlier than 2020-07-06 08:00 | 张宝杰 | 1h |  |
| 238 | 1.3.2.7.5 | 配置库备份和配置项状态跟踪 5 | 0.12d | 2020-07-13 08:00 | 2020-07-13 09:00 |  |  | 50.88d | start no earlier than 2020-07-13 08:00 | 张宝杰 | 1h |  |
| 239 | 1.3.2.7.6 | 配置库备份和配置项状态跟踪 6 | 0.12d | 2020-07-20 08:00 | 2020-07-20 09:00 |  |  | 44.88d | start no earlier than 2020-07-20 08:00 | 张宝杰 | 1h |  |
| 240 | 1.3.2.7.7 | 配置库备份和配置项状态跟踪 7 | 0.12d | 2020-07-27 08:00 | 2020-07-27 09:00 |  |  | 38.88d | start no earlier than 2020-07-27 08:00 | 张宝杰 | 1h |  |
| 241 | 1.3.2.7.8 | 配置库备份和配置项状态跟踪 8 | 0.12d | 2020-08-03 08:00 | 2020-08-03 09:00 |  |  | 32.88d | start no earlier than 2020-08-03 08:00 | 张宝杰 | 1h |  |
| 242 | 1.3.2.7.9 | 配置库备份和配置项状态跟踪 9 | 0.12d | 2020-08-10 08:00 | 2020-08-10 09:00 |  |  | 26.88d | start no earlier than 2020-08-10 08:00 | 张宝杰 | 1h |  |
| 243 | 1.3.2.7.10 | 配置库备份和配置项状态跟踪 10 | 0.12d | 2020-08-17 08:00 | 2020-08-17 09:00 |  |  | 20.88d | start no earlier than 2020-08-17 08:00 | 张宝杰 | 1h |  |
| 244 | 1.3.2.7.11 | 配置库备份和配置项状态跟踪 11 | 0.12d | 2020-08-24 08:00 | 2020-08-24 09:00 |  |  | 14.88d | start no earlier than 2020-08-24 08:00 | 张宝杰 | 1h |  |
| 245 | 1.3.2.7.12 | 配置库备份和配置项状态跟踪 12 | 0.12d | 2020-08-31 08:00 | 2020-08-31 09:00 |  |  | 8.88d | start no earlier than 2020-08-31 08:00 | 张宝杰 | 1h |  |
| 246 | 1.3.2.7.13 | 配置库备份和配置项状态跟踪 13 | 0.12d | 2020-09-07 08:00 | 2020-09-07 09:00 |  |  | 2.88d | start no earlier than 2020-09-07 08:00 | 张宝杰 | 1h |  |
